# CCBMER Bulk File Handler

How a schedule from MS Project changed from version to version. A marks actual dates.

## Version 1 (saved 2009-11-18, file LOGSA CCBMER BFH.mpp)

Note of the change: SQL Templates baseline

| ID | WBS | Task | Duration | Start | Finish | Predecessors | Total float |
| --- | --- | --- | --- | --- | --- | --- | --- |
| 1 | 1 | **Bulk File Handler** | 210d | 2009-11-02 08:00 | 2010-08-20 17:00 |  | 38d |
| 2 | 1.1 | **Concept and Design** | 3d | 2009-11-02 08:00 | 2009-11-04 17:00 |  | 38d |
| 3 |  | Concept Statement | 4h | 2009-11-02 08:00 | 2009-11-02 12:00 |  | 38d |
| 4 |  | Preliminary Design | 4h | 2009-11-02 13:00 | 2009-11-02 17:00 | 3 | 38d |
| 5 | 1.1.3 | **Design Review** | 1.5d | 2009-11-03 08:00 | 2009-11-04 12:00 |  | 38d |
| 6 |  | Overview Design | 4h | 2009-11-03 08:00 | 2009-11-03 12:00 | 4 | 38d |
| 7 |  | Requirements Definition Review | 4h | 2009-11-03 13:00 | 2009-11-03 17:00 | 6 | 38d |
| 8 |  | Functional Design Review | 4h | 2009-11-04 08:00 | 2009-11-04 12:00 | 7 | 38d |
| 9 |  | Design Approval | 4h | 2009-11-04 13:00 | 2009-11-04 17:00 | 8 | 38d |
| 10 | 1.2 | **Environment Setup** | 2.5d | 2009-11-05 08:00 | 2009-11-09 12:00 |  | 38d |
| 11 | 1.2.1 | **Hardware** | 1d | 2009-11-05 08:00 | 2009-11-05 17:00 |  | 38d |
| 12 |  | Servers (bulk file management) | 4h | 2009-11-05 08:00 | 2009-11-05 12:00 | 9 | 38d |
| 13 |  | Servers(database servers) | 4h | 2009-11-05 13:00 | 2009-11-05 17:00 | 12 | 38d |
| 14 | 1.2.2 | **Software** | 1.5d | 2009-11-06 08:00 | 2009-11-09 12:00 |  | 38d |
| 15 |  | Operating System Definition and Specifications | 4h | 2009-11-06 08:00 | 2009-11-06 12:00 | 13 | 38d |
| 16 |  | Development Tools | 4h | 2009-11-06 13:00 | 2009-11-06 17:00 | 15 | 38d |
| 17 |  | Testing Tools | 4h | 2009-11-09 08:00 | 2009-11-09 12:00 | 16 | 38d |
| 18 | 1.3 | **Technical Specifications** | 83d | 2009-11-09 13:00 | 2010-03-04 12:00 |  | 38d |
| 19 |  | Overview | 4h | 2009-11-09 13:00 | 2009-11-09 17:00 | 17 | 38d |
| 20 | 1.3.2 | **Component Definition** | 19d | 2009-11-10 08:00 | 2009-12-04 17:00 |  | 38d |
| 21 | 1.3.2.1 | **Directory Architecture** | 1d | 2009-11-10 08:00 | 2009-11-10 17:00 |  | 38d |
| 22 |  | Bulk Management Process Directory Architecture | 4h | 2009-11-10 08:00 | 2009-11-10 12:00 | 19 | 38d |
| 23 |  | Long Term Storage Directory and Maintenance | 4h | 2009-11-10 13:00 | 2009-11-10 17:00 | 22 | 38d |
| 24 | 1.3.2.2 | **Template Definition** | 10.5d | 2009-11-11 08:00 | 2009-11-25 12:00 |  | 38d |
| 25 | 1.3.2.2.1 | **Forklift** | 1.5d | 2009-11-11 08:00 | 2009-11-12 12:00 |  | 38d |
| 26 |  | Library Functions (common) | 4h | 2009-11-11 08:00 | 2009-11-11 12:00 | 23 | 38d |
| 27 |  | Library Functions (unique) | 4h | 2009-11-11 13:00 | 2009-11-11 17:00 | 26 | 38d |
| 28 |  | Template defintion with detailed documentation | 4h | 2009-11-12 08:00 | 2009-11-12 12:00 | 27 | 38d |
| 29 | 1.3.2.2.2 | **Sorter** | 1.5d | 2009-11-12 13:00 | 2009-11-13 17:00 |  | 38d |
| 30 |  | Library Functions (common) | 4h | 2009-11-12 13:00 | 2009-11-12 17:00 | 28 | 38d |
| 31 |  | Library Functions (unique) | 4h | 2009-11-13 08:00 | 2009-11-13 12:00 | 30 | 38d |
| 32 |  | Template defintion with detailed documentation | 4h | 2009-11-13 13:00 | 2009-11-13 17:00 | 31 | 38d |
| 33 | 1.3.2.2.3 | **Cataloger** | 1.5d | 2009-11-16 08:00 | 2009-11-17 12:00 |  | 38d |
| 34 |  | Library Functions (common) | 4h | 2009-11-16 08:00 | 2009-11-16 12:00 | 32 | 38d |
| 35 |  | Library Functions (unique) | 4h | 2009-11-16 13:00 | 2009-11-16 17:00 | 34 | 38d |
| 36 |  | Template defintion with detailed documentation | 4h | 2009-11-17 08:00 | 2009-11-17 12:00 | 35 | 38d |
| 37 | 1.3.2.2.4 | **Stocker** | 1.5d | 2009-11-17 13:00 | 2009-11-18 17:00 |  | 38d |
| 38 |  | Library Functions (common) | 4h | 2009-11-17 13:00 | 2009-11-17 17:00 | 36 | 38d |
| 39 |  | Library Functions (unique) | 4h | 2009-11-18 08:00 | 2009-11-18 12:00 | 38 | 38d |
| 40 |  | Template defintion with detailed documentation | 4h | 2009-11-18 13:00 | 2009-11-18 17:00 | 39 | 38d |
| 41 | 1.3.2.2.5 | **Retriever** | 1.5d | 2009-11-19 08:00 | 2009-11-20 12:00 |  | 38d |
| 42 |  | Library Functions (common) | 4h | 2009-11-19 08:00 | 2009-11-19 12:00 | 40 | 38d |
| 43 |  | Library Functions (unique) | 4h | 2009-11-19 13:00 | 2009-11-19 17:00 | 42 | 38d |
| 44 |  | Template defintion with detailed documentation | 4h | 2009-11-20 08:00 | 2009-11-20 12:00 | 43 | 38d |
| 45 | 1.3.2.2.6 | **Packager** | 1.5d | 2009-11-20 13:00 | 2009-11-23 17:00 |  | 38d |
| 46 |  | Library Functions (common) | 4h | 2009-11-20 13:00 | 2009-11-20 17:00 | 44 | 38d |
| 47 |  | Library Functions (unique) | 4h | 2009-11-23 08:00 | 2009-11-23 12:00 | 46 | 38d |
| 48 |  | Template defintion with detailed documentation | 4h | 2009-11-23 13:00 | 2009-11-23 17:00 | 47 | 38d |
| 49 | 1.3.2.2.7 | **Sender** | 1.5d | 2009-11-24 08:00 | 2009-11-25 12:00 |  | 38d |
| 50 |  | Library Functions (common) | 4h | 2009-11-24 08:00 | 2009-11-24 12:00 | 48 | 38d |
| 51 |  | Library Functions (unique) | 4h | 2009-11-24 13:00 | 2009-11-24 17:00 | 50 | 38d |
| 52 |  | Template defintion with detailed documentation | 4h | 2009-11-25 08:00 | 2009-11-25 12:00 | 51 | 38d |
| 53 | 1.3.2.3 | **Composer Defintion** | 7.5d | 2009-11-25 13:00 | 2009-12-04 17:00 |  | 38d |
| 54 |  | Control Tables | 4h | 2009-11-25 13:00 | 2009-11-25 17:00 | 52 | 38d |
| 55 |  | Library Modules | 4h | 2009-11-26 08:00 | 2009-11-26 12:00 | 54 | 38d |
| 56 | 1.3.2.3.3 | **Business Rule Manager** | 2.5d | 2009-11-26 13:00 | 2009-11-30 17:00 |  | 38d |
| 57 |  | GUID Definition | 4h | 2009-11-26 13:00 | 2009-11-26 17:00 | 55 | 38d |
| 58 |  | Control Table Interface | 4h | 2009-11-27 08:00 | 2009-11-27 12:00 | 57 | 38d |
| 59 |  | Business rule management for BRM | 4h | 2009-11-27 13:00 | 2009-11-27 17:00 | 58 | 38d |
| 60 |  | Test Procedures to test BRM | 4h | 2009-11-30 08:00 | 2009-11-30 12:00 | 59 | 38d |
| 61 |  | Documentation validation testing | 4h | 2009-11-30 13:00 | 2009-11-30 17:00 | 60 | 38d |
| 62 | 1.3.2.3.4 | **Composer Structure** | 2d | 2009-12-01 08:00 | 2009-12-02 17:00 |  | 38d |
| 63 |  | Library Functions (common) | 4h | 2009-12-01 08:00 | 2009-12-01 12:00 | 61 | 38d |
| 64 |  | Library Functions (unique) | 4h | 2009-12-01 13:00 | 2009-12-01 17:00 | 63 | 38d |
| 65 |  | Template defintion with detailed documentation | 4h | 2009-12-02 08:00 | 2009-12-02 12:00 | 64 | 38d |
| 66 |  | Business Rules for Composer Level | 4h | 2009-12-02 13:00 | 2009-12-02 17:00 | 65 | 38d |
| 67 | 1.3.2.3.5 | **Composer Builder** | 2d | 2009-12-03 08:00 | 2009-12-04 17:00 |  | 38d |
| 68 |  | Library Functions (common) | 4h | 2009-12-03 08:00 | 2009-12-03 12:00 | 66 | 38d |
| 69 |  | Library Functions (unique) | 4h | 2009-12-03 13:00 | 2009-12-03 17:00 | 68 | 38d |
| 70 |  | Template defintion with detailed documentation | 4h | 2009-12-04 08:00 | 2009-12-04 12:00 | 69 | 38d |

| ID | WBS | Task | Duration | Start | Finish | Predecessors | Total float |
| --- | --- | --- | --- | --- | --- | --- | --- |
| 71 |  | Business Rules for Composer Builder | 4h | 2009-12-04 13:00 | 2009-12-04 17:00 | 70 | 38d |
| 72 | 1.3.3 | **Test Defintion** | 52.5d | 2009-12-07 08:00 | 2010-02-17 12:00 |  | 38d |
| 73 | 1.3.3.1 | **Library Module Tests** | 2.5d | 2009-12-07 08:00 | 2009-12-09 12:00 |  | 38d |
| 74 |  | Define test requirements for each function | 4h | 2009-12-07 08:00 | 2009-12-07 12:00 | 67 | 38d |
| 75 |  | Define in / out bound test | 4h | 2009-12-07 13:00 | 2009-12-07 17:00 | 74 | 38d |
| 76 |  | Define exception test | 4h | 2009-12-08 08:00 | 2009-12-08 12:00 | 75 | 38d |
| 77 |  | Define Null test | 4h | 2009-12-08 13:00 | 2009-12-08 17:00 | 76 | 38d |
| 78 |  | Define Query test | 4h | 2009-12-09 08:00 | 2009-12-09 12:00 | 77 | 38d |
| 79 | 1.3.3.2 | **Control Table Tests** | 2.5d | 2009-12-09 13:00 | 2009-12-11 17:00 |  | 38d |
| 80 |  | Define test requirements for each table | 4h | 2009-12-09 13:00 | 2009-12-09 17:00 | 78 | 38d |
| 81 |  | Define in / out bound test | 4h | 2009-12-10 08:00 | 2009-12-10 12:00 | 80 | 38d |
| 82 |  | Define exception test | 4h | 2009-12-10 13:00 | 2009-12-10 17:00 | 81 | 38d |
| 83 |  | Define Null test | 4h | 2009-12-11 08:00 | 2009-12-11 12:00 | 82 | 38d |
| 84 |  | Define Query test | 4h | 2009-12-11 13:00 | 2009-12-11 17:00 | 83 | 38d |
| 85 | 1.3.3.3 | **Business Rule Manager Test** | 4d | 2009-12-14 08:00 | 2009-12-17 17:00 |  | 38d |
| 86 |  | Define test requirements for each function | 4h | 2009-12-14 08:00 | 2009-12-14 12:00 | 84 | 38d |
| 87 |  | Define in / out bound test | 4h | 2009-12-14 13:00 | 2009-12-14 17:00 | 86 | 38d |
| 88 |  | Define exception test | 4h | 2009-12-15 08:00 | 2009-12-15 12:00 | 87 | 38d |
| 89 |  | Define Null test | 4h | 2009-12-15 13:00 | 2009-12-15 17:00 | 88 | 38d |
| 90 |  | Define Query test | 4h | 2009-12-16 08:00 | 2009-12-16 12:00 | 89 | 38d |
| 91 |  | Define test for control on each field on GUID | 4h | 2009-12-16 13:00 | 2009-12-16 17:00 | 90 | 38d |
| 92 |  | Define test for in and out of range for each field | 4h | 2009-12-17 08:00 | 2009-12-17 12:00 | 91 | 38d |
| 93 |  | Define test for each control button on form | 4h | 2009-12-17 13:00 | 2009-12-17 17:00 | 92 | 38d |
| 94 | 1.3.3.4 | **Warehouse Manager Test** | 4d | 2009-12-18 08:00 | 2009-12-23 17:00 |  | 38d |
| 95 |  | Define test requirements for each function or procedure in package | 4h | 2009-12-18 08:00 | 2009-12-18 12:00 | 93 | 38d |
| 96 |  | Define in / out bound test | 4h | 2009-12-18 13:00 | 2009-12-18 17:00 | 95 | 38d |
| 97 |  | Define exception test | 4h | 2009-12-21 08:00 | 2009-12-21 12:00 | 96 | 38d |
| 98 |  | Define Null test | 4h | 2009-12-21 13:00 | 2009-12-21 17:00 | 97 | 38d |
| 99 |  | Define Query test | 4h | 2009-12-22 08:00 | 2009-12-22 12:00 | 98 | 38d |
| 100 |  | Define test for each interaction between functions and procedures in package | 4h | 2009-12-22 13:00 | 2009-12-22 17:00 | 99 | 38d |
| 101 |  | Define test for each cursor or query to database | 4h | 2009-12-23 08:00 | 2009-12-23 12:00 | 100 | 38d |
| 102 |  | Define test for each exception defined in package | 4h | 2009-12-23 13:00 | 2009-12-23 17:00 | 101 | 38d |
| 103 | 1.3.3.5 | **Composer Test** | 5d | 2009-12-24 08:00 | 2009-12-30 17:00 |  | 38d |
| 104 |  | Define test requirements for each function | 4h | 2009-12-24 08:00 | 2009-12-24 12:00 | 102 | 38d |
| 105 |  | Define in / out bound test | 4h | 2009-12-24 13:00 | 2009-12-24 17:00 | 104 | 38d |
| 106 |  | Define exception test | 4h | 2009-12-25 08:00 | 2009-12-25 12:00 | 105 | 38d |
| 107 |  | Define Null test | 4h | 2009-12-25 13:00 | 2009-12-25 17:00 | 106 | 38d |
| 108 |  | Define Query test | 4h | 2009-12-28 08:00 | 2009-12-28 12:00 | 107 | 38d |
| 109 |  | Define create and compile tests for exception handling | 4h | 2009-12-28 13:00 | 2009-12-28 17:00 | 108 | 38d |
| 110 |  | Define tests for each exception and control | 4h | 2009-12-29 08:00 | 2009-12-29 12:00 | 109 | 38d |
| 111 |  | Define tests for execution of composer and execpted function | 4h | 2009-12-29 13:00 | 2009-12-29 17:00 | 110 | 38d |
| 112 |  | Define test for Perl Strict control | 4h | 2009-12-30 08:00 | 2009-12-30 12:00 | 111 | 38d |
| 113 |  | Define test for missing libraries | 4h | 2009-12-30 13:00 | 2009-12-30 17:00 | 112 | 38d |
| 114 | 1.3.3.6 | **Components Tests** | 26.5d | 2009-12-31 08:00 | 2010-02-05 12:00 |  | 38d |
| 115 | 1.3.3.6.1 | **For each component test timer control** | 3.5d | 2009-12-31 08:00 | 2010-01-05 12:00 |  | 38d |
| 116 |  | Forklift (FL) | 4h | 2009-12-31 08:00 | 2009-12-31 12:00 | 113 | 38d |
| 117 |  | Sorter (SO) | 4h | 2009-12-31 13:00 | 2009-12-31 17:00 | 116 | 38d |
| 118 |  | Cataloger (CT) | 4h | 2010-01-01 08:00 | 2010-01-01 12:00 | 117 | 38d |
| 119 |  | Stocker (ST) | 4h | 2010-01-01 13:00 | 2010-01-01 17:00 | 118 | 38d |
| 120 |  | Retriever (RT) | 4h | 2010-01-04 08:00 | 2010-01-04 12:00 | 119 | 38d |
| 121 |  | Packager (PR) | 4h | 2010-01-04 13:00 | 2010-01-04 17:00 | 120 | 38d |
| 122 |  | Sender (SD) | 4h | 2010-01-05 08:00 | 2010-01-05 12:00 | 121 | 38d |
| 123 | 1.3.3.6.2 | **For each component test each move file** | 3.5d | 2010-01-05 13:00 | 2010-01-08 17:00 |  | 38d |
| 124 |  | Forklift (FL) | 4h | 2010-01-05 13:00 | 2010-01-05 17:00 | 122 | 38d |
| 125 |  | Sorter (SO) | 4h | 2010-01-06 08:00 | 2010-01-06 12:00 | 124 | 38d |
| 126 |  | Cataloger (CT) | 4h | 2010-01-06 13:00 | 2010-01-06 17:00 | 125 | 38d |
| 127 |  | Stocker (ST) | 4h | 2010-01-07 08:00 | 2010-01-07 12:00 | 126 | 38d |
| 128 |  | Retriever (RT) | 4h | 2010-01-07 13:00 | 2010-01-07 17:00 | 127 | 38d |
| 129 |  | Packager (PR) | 4h | 2010-01-08 08:00 | 2010-01-08 12:00 | 128 | 38d |
| 130 |  | Sender (SD) | 4h | 2010-01-08 13:00 | 2010-01-08 17:00 | 129 | 38d |
| 131 | 1.3.3.6.3 | **For each component test each library call** | 3.5d | 2010-01-11 08:00 | 2010-01-14 12:00 |  | 38d |
| 132 |  | Forklift (FL) | 4h | 2010-01-11 08:00 | 2010-01-11 12:00 | 130 | 38d |
| 133 |  | Sorter (SO) | 4h | 2010-01-11 13:00 | 2010-01-11 17:00 | 132 | 38d |
| 134 |  | Cataloger (CT) | 4h | 2010-01-12 08:00 | 2010-01-12 12:00 | 133 | 38d |
| 135 |  | Stocker (ST) | 4h | 2010-01-12 13:00 | 2010-01-12 17:00 | 134 | 38d |
| 136 |  | Retriever (RT) | 4h | 2010-01-13 08:00 | 2010-01-13 12:00 | 135 | 38d |
| 137 |  | Packager (PR) | 4h | 2010-01-13 13:00 | 2010-01-13 17:00 | 136 | 38d |
| 138 |  | Sender (SD) | 4h | 2010-01-14 08:00 | 2010-01-14 12:00 | 137 | 38d |
| 139 | 1.3.3.6.4 | **For each component test each database call** | 3.5d | 2010-01-14 13:00 | 2010-01-19 17:00 |  | 38d |
| 140 |  | Forklift (FL) | 4h | 2010-01-14 13:00 | 2010-01-14 17:00 | 138 | 38d |

| ID | WBS | Task | Duration | Start | Finish | Predecessors | Total float |
| --- | --- | --- | --- | --- | --- | --- | --- |
| 141 |  | Sorter (SO) | 4h | 2010-01-15 08:00 | 2010-01-15 12:00 | 140 | 38d |
| 142 |  | Cataloger (CT) | 4h | 2010-01-15 13:00 | 2010-01-15 17:00 | 141 | 38d |
| 143 |  | Stocker (ST) | 4h | 2010-01-18 08:00 | 2010-01-18 12:00 | 142 | 38d |
| 144 |  | Retriever (RT) | 4h | 2010-01-18 13:00 | 2010-01-18 17:00 | 143 | 38d |
| 145 |  | Packager (PR) | 4h | 2010-01-19 08:00 | 2010-01-19 12:00 | 144 | 38d |
| 146 |  | Sender (SD) | 4h | 2010-01-19 13:00 | 2010-01-19 17:00 | 145 | 38d |
| 147 | 1.3.3.6.5 | **For each component test each execute/system call** | 3.5d | 2010-01-20 08:00 | 2010-01-25 12:00 |  | 38d |
| 148 |  | Forklift (FL) | 4h | 2010-01-20 08:00 | 2010-01-20 12:00 | 146 | 38d |
| 149 |  | Sorter (SO) | 4h | 2010-01-20 13:00 | 2010-01-20 17:00 | 148 | 38d |
| 150 |  | Cataloger (CT) | 4h | 2010-01-21 08:00 | 2010-01-21 12:00 | 149 | 38d |
| 151 |  | Stocker (ST) | 4h | 2010-01-21 13:00 | 2010-01-21 17:00 | 150 | 38d |
| 152 |  | Retriever (RT) | 4h | 2010-01-22 08:00 | 2010-01-22 12:00 | 151 | 38d |
| 153 |  | Packager (PR) | 4h | 2010-01-22 13:00 | 2010-01-22 17:00 | 152 | 38d |
| 154 |  | Sender (SD) | 4h | 2010-01-25 08:00 | 2010-01-25 12:00 | 153 | 38d |
| 155 | 1.3.3.6.6 | **For each component test compliation on creation** | 3.5d | 2010-01-25 13:00 | 2010-01-28 17:00 |  | 38d |
| 156 |  | Forklift (FL) | 4h | 2010-01-25 13:00 | 2010-01-25 17:00 | 154 | 38d |
| 157 |  | Sorter (SO) | 4h | 2010-01-26 08:00 | 2010-01-26 12:00 | 156 | 38d |
| 158 |  | Cataloger (CT) | 4h | 2010-01-26 13:00 | 2010-01-26 17:00 | 157 | 38d |
| 159 |  | Stocker (ST) | 4h | 2010-01-27 08:00 | 2010-01-27 12:00 | 158 | 38d |
| 160 |  | Retriever (RT) | 4h | 2010-01-27 13:00 | 2010-01-27 17:00 | 159 | 38d |
| 161 |  | Packager (PR) | 4h | 2010-01-28 08:00 | 2010-01-28 12:00 | 160 | 38d |
| 162 |  | Sender (SD) | 4h | 2010-01-28 13:00 | 2010-01-28 17:00 | 161 | 38d |
| 163 | 1.3.3.6.7 | **For each component test file/directory permissions** | 5.5d | 2010-01-29 08:00 | 2010-02-05 12:00 |  | 38d |
| 164 |  | Forklift (FL) | 4h | 2010-01-29 08:00 | 2010-01-29 12:00 | 162 | 38d |
| 165 |  | Sorter (SO) | 4h | 2010-01-29 13:00 | 2010-01-29 17:00 | 164 | 38d |
| 166 |  | Cataloger (CT) | 4h | 2010-02-01 08:00 | 2010-02-01 12:00 | 165 | 38d |
| 167 |  | Stocker (ST) | 4h | 2010-02-01 13:00 | 2010-02-01 17:00 | 166 | 38d |
| 168 |  | Retriever (RT) | 4h | 2010-02-02 08:00 | 2010-02-02 12:00 | 167 | 38d |
| 169 |  | Packager (PR) | 4h | 2010-02-02 13:00 | 2010-02-02 17:00 | 168 | 38d |
| 170 |  | Sender (SD) | 4h | 2010-02-03 08:00 | 2010-02-03 12:00 | 169 | 38d |
| 171 |  | TBD Tests | 4h | 2010-02-03 13:00 | 2010-02-03 17:00 | 170 | 38d |
| 172 |  | TBD Tests | 4h | 2010-02-04 08:00 | 2010-02-04 12:00 | 171 | 38d |
| 173 |  | TBD Tests | 4h | 2010-02-04 13:00 | 2010-02-04 17:00 | 172 | 38d |
| 174 |  | TBD Tests | 4h | 2010-02-05 08:00 | 2010-02-05 12:00 | 173 | 38d |
| 175 | 1.3.3.7 | **Integration Tests** | 8d | 2010-02-05 13:00 | 2010-02-17 12:00 |  | 38d |
| 176 |  | FL - SO | 4h | 2010-02-05 13:00 | 2010-02-05 17:00 | 174 | 38d |
| 177 |  | FL - WM | 4h | 2010-02-08 08:00 | 2010-02-08 12:00 | 176 | 38d |
| 178 |  | SO - CT | 4h | 2010-02-08 13:00 | 2010-02-08 17:00 | 177 | 38d |
| 179 |  | SO - WM | 4h | 2010-02-09 08:00 | 2010-02-09 12:00 | 178 | 38d |
| 180 |  | CT - ST | 4h | 2010-02-09 13:00 | 2010-02-09 17:00 | 179 | 38d |
| 181 |  | CT - WM | 4h | 2010-02-10 08:00 | 2010-02-10 12:00 | 180 | 38d |
| 182 |  | ST - WM | 4h | 2010-02-10 13:00 | 2010-02-10 17:00 | 181 | 38d |
| 183 |  | RT - PR | 4h | 2010-02-11 08:00 | 2010-02-11 12:00 | 182 | 38d |
| 184 |  | RT - WM | 4h | 2010-02-11 13:00 | 2010-02-11 17:00 | 183 | 38d |
| 185 |  | PR - SD | 4h | 2010-02-12 08:00 | 2010-02-12 12:00 | 184 | 38d |
| 186 |  | PR - WM | 4h | 2010-02-12 13:00 | 2010-02-12 17:00 | 185 | 38d |
| 187 |  | END to END IN | 4h | 2010-02-15 08:00 | 2010-02-15 12:00 | 186 | 38d |
| 188 |  | END to END OUT | 4h | 2010-02-15 13:00 | 2010-02-15 17:00 | 187 | 38d |
| 189 |  | TBD Tests | 4h | 2010-02-16 08:00 | 2010-02-16 12:00 | 188 | 38d |
| 190 |  | TBD Tests | 4h | 2010-02-16 13:00 | 2010-02-16 17:00 | 189 | 38d |
| 191 |  | TBD Tests | 4h | 2010-02-17 08:00 | 2010-02-17 12:00 | 190 | 38d |
| 192 | 1.3.4 | **Deployment Plan** | 11d | 2010-02-17 13:00 | 2010-03-04 12:00 |  | 38d |
| 193 | 1.3.4.1 | **Database Table and Metadata Deployment** | 5d | 2010-02-17 13:00 | 2010-02-24 12:00 |  | 38d |
| 194 |  | LOGSA Deployment Structure Setup | 4h | 2010-02-17 13:00 | 2010-02-17 17:00 | 191 | 38d |
| 195 |  | Scripts for Tables | 4h | 2010-02-18 08:00 | 2010-02-18 12:00 | 194 | 38d |
| 196 |  | Scripts for Packages | 4h | 2010-02-18 13:00 | 2010-02-18 17:00 | 195 | 38d |
| 197 |  | Scripts for Contraints | 4h | 2010-02-19 08:00 | 2010-02-19 12:00 | 196 | 38d |
| 198 |  | Scripts for Indexes | 4h | 2010-02-19 13:00 | 2010-02-19 17:00 | 197 | 38d |
| 199 |  | Scripts for views | 4h | 2010-02-22 08:00 | 2010-02-22 12:00 | 198 | 38d |
| 200 |  | Scripts for sequences | 4h | 2010-02-22 13:00 | 2010-02-22 17:00 | 199 | 38d |
| 201 |  | Scripts for synonyms | 4h | 2010-02-23 08:00 | 2010-02-23 12:00 | 200 | 38d |
| 202 |  | Scripts for data from each table | 4h | 2010-02-23 13:00 | 2010-02-23 17:00 | 201 | 38d |
| 203 |  | TBD Scripts | 4h | 2010-02-24 08:00 | 2010-02-24 12:00 | 202 | 38d |
| 204 | 1.3.4.2 | **Application Deployment** | 3.5d | 2010-02-24 13:00 | 2010-03-01 17:00 |  | 38d |
| 205 |  | Module Packaging | 4h | 2010-02-24 13:00 | 2010-02-24 17:00 | 203 | 38d |
| 206 |  | Metadata Packaging | 4h | 2010-02-25 08:00 | 2010-02-25 12:00 | 205 | 38d |
| 207 |  | Team Track Definition | 4h | 2010-02-25 13:00 | 2010-02-25 17:00 | 206 | 38d |
| 208 |  | Module VM Check in | 4h | 2010-02-26 08:00 | 2010-02-26 12:00 | 207 | 38d |
| 209 |  | Metadata Packaging VM Check in | 4h | 2010-02-26 13:00 | 2010-02-26 17:00 | 208 | 38d |
| 210 |  | Deployment Test Suite VM Check in | 4h | 2010-03-01 08:00 | 2010-03-01 12:00 | 209 | 38d |

| ID | WBS | Task | Duration | Start | Finish | Predecessors | Total float |
| --- | --- | --- | --- | --- | --- | --- | --- |
| 211 |  | Documentation VM Check in | 4h | 2010-03-01 13:00 | 2010-03-01 17:00 | 210 | 38d |
| 212 | 1.3.4.3 | **In Place Deployment Test Suite** | 2.5d | 2010-03-02 08:00 | 2010-03-04 12:00 |  | 38d |
| 213 |  | Determine In Place Deployment Tests needed | 4h | 2010-03-02 08:00 | 2010-03-02 12:00 | 211 | 38d |
| 214 |  | Package Tests | 4h | 2010-03-02 13:00 | 2010-03-02 17:00 | 213 | 38d |
| 215 |  | Test the package of test | 4h | 2010-03-03 08:00 | 2010-03-03 12:00 | 214 | 38d |
| 216 |  | Document the steps to run the test | 4h | 2010-03-03 13:00 | 2010-03-03 17:00 | 215 | 38d |
| 217 |  | Create the Deployment Test Suite | 4h | 2010-03-04 08:00 | 2010-03-04 12:00 | 216 | 38d |
| 218 | 1.4 | **Technical Signoff** | 1d | 2010-03-04 13:00 | 2010-03-05 12:00 |  | 38d |
| 219 |  | Team | 4h | 2010-03-04 13:00 | 2010-03-04 17:00 | 212 | 38d |
| 220 |  | Management | 4h | 2010-03-05 08:00 | 2010-03-05 12:00 | 219 | 38d |
| 221 | 1.5 | **Development Cycle** | 110.5d | 2010-03-05 13:00 | 2010-08-06 17:00 |  | 38d |
| 222 | 1.5.1 | **Documentation** | 14.5d | 2010-03-05 13:00 | 2010-03-25 17:00 |  | 38d |
| 223 | 1.5.1.1 | **System Documentation** | 3.5d | 2010-03-05 13:00 | 2010-03-10 17:00 |  | 38d |
| 224 |  | Concept | 4h | 2010-03-05 13:00 | 2010-03-05 17:00 | 220 | 38d |
| 225 |  | Design Overview | 4h | 2010-03-08 08:00 | 2010-03-08 12:00 | 224 | 38d |
| 226 |  | Product Use | 4h | 2010-03-08 13:00 | 2010-03-08 17:00 | 225 | 38d |
| 227 |  | Control and Processing | 4h | 2010-03-09 08:00 | 2010-03-09 12:00 | 226 | 38d |
| 228 |  | Maintenance and Philosophy | 4h | 2010-03-09 13:00 | 2010-03-09 17:00 | 227 | 38d |
| 229 |  | Components and Definitions | 4h | 2010-03-10 08:00 | 2010-03-10 12:00 | 228 | 38d |
| 230 |  | Reference Appendixes | 4h | 2010-03-10 13:00 | 2010-03-10 17:00 | 229 | 38d |
| 231 | 1.5.1.2 | **User Documentation** | 3.5d | 2010-03-11 08:00 | 2010-03-16 12:00 |  | 38d |
| 232 |  | Concept | 4h | 2010-03-11 08:00 | 2010-03-11 12:00 | 230 | 38d |
| 233 |  | Design Overview | 4h | 2010-03-11 13:00 | 2010-03-11 17:00 | 232 | 38d |
| 234 |  | Product Use | 4h | 2010-03-12 08:00 | 2010-03-12 12:00 | 233 | 38d |
| 235 |  | Control and Processing | 4h | 2010-03-12 13:00 | 2010-03-12 17:00 | 234 | 38d |
| 236 |  | Maintenance and Philosophy | 4h | 2010-03-15 08:00 | 2010-03-15 12:00 | 235 | 38d |
| 237 |  | Components and Definitions | 4h | 2010-03-15 13:00 | 2010-03-15 17:00 | 236 | 38d |
| 238 |  | Reference Appendixes | 4h | 2010-03-16 08:00 | 2010-03-16 12:00 | 237 | 38d |
| 239 | 1.5.1.3 | **Test Documentation** | 2.5d | 2010-03-16 13:00 | 2010-03-18 17:00 |  | 38d |
| 240 |  | Concept | 4h | 2010-03-16 13:00 | 2010-03-16 17:00 | 238 | 38d |
| 241 |  | Functional Description | 4h | 2010-03-17 08:00 | 2010-03-17 12:00 | 240 | 38d |
| 242 |  | Design | 4h | 2010-03-17 13:00 | 2010-03-17 17:00 | 241 | 38d |
| 243 |  | Structures and defintion | 4h | 2010-03-18 08:00 | 2010-03-18 12:00 | 242 | 38d |
| 244 |  | Reference Appendixes | 4h | 2010-03-18 13:00 | 2010-03-18 17:00 | 243 | 38d |
| 245 | 1.5.1.4 | **Template Documentation** | 2.5d | 2010-03-19 08:00 | 2010-03-23 12:00 |  | 38d |
| 246 |  | Concept | 4h | 2010-03-19 08:00 | 2010-03-19 12:00 | 244 | 38d |
| 247 |  | Functional Description | 4h | 2010-03-19 13:00 | 2010-03-19 17:00 | 246 | 38d |
| 248 |  | Design | 4h | 2010-03-22 08:00 | 2010-03-22 12:00 | 247 | 38d |
| 249 |  | Structures and defintion | 4h | 2010-03-22 13:00 | 2010-03-22 17:00 | 248 | 38d |
| 250 |  | Reference Appendixes | 4h | 2010-03-23 08:00 | 2010-03-23 12:00 | 249 | 38d |
| 251 | 1.5.1.5 | **Warehouse Manager Documentation** | 2.5d | 2010-03-23 13:00 | 2010-03-25 17:00 |  | 38d |
| 252 |  | Concept | 4h | 2010-03-23 13:00 | 2010-03-23 17:00 | 250 | 38d |
| 253 |  | Functional Description | 4h | 2010-03-24 08:00 | 2010-03-24 12:00 | 252 | 38d |
| 254 |  | Design | 4h | 2010-03-24 13:00 | 2010-03-24 17:00 | 253 | 38d |
| 255 |  | Calls and Access | 4h | 2010-03-25 08:00 | 2010-03-25 12:00 | 254 | 38d |
| 256 |  | Reference Appendixes | 4h | 2010-03-25 13:00 | 2010-03-25 17:00 | 255 | 38d |
| 257 | 1.5.2 | **Test Development** | 14d | 2010-03-26 08:00 | 2010-04-14 17:00 |  | 38d |
| 258 | 1.5.2.1 | **Library Module Tests** | 5d | 2010-03-26 08:00 | 2010-04-01 17:00 |  | 38d |
| 259 |  | Database.pm | 4h | 2010-03-26 08:00 | 2010-03-26 12:00 | 256 | 38d |
| 260 |  | Storage.pm | 4h | 2010-03-26 13:00 | 2010-03-26 17:00 | 259 | 38d |
| 261 |  | Dataset.pm | 4h | 2010-03-29 08:00 | 2010-03-29 12:00 | 260 | 38d |
| 262 |  | Plog.pm | 4h | 2010-03-29 13:00 | 2010-03-29 17:00 | 261 | 38d |
| 263 |  | CFD.pm | 4h | 2010-03-30 08:00 | 2010-03-30 12:00 | 262 | 38d |
| 264 |  | ComBld.pm | 4h | 2010-03-30 13:00 | 2010-03-30 17:00 | 263 | 38d |
| 265 |  | Composer.pm | 4h | 2010-03-31 08:00 | 2010-03-31 12:00 | 264 | 38d |
| 266 |  | Sending.pm | 4h | 2010-03-31 13:00 | 2010-03-31 17:00 | 265 | 38d |
| 267 |  | Mail.pm | 4h | 2010-04-01 08:00 | 2010-04-01 12:00 | 266 | 38d |
| 268 |  | TBD | 4h | 2010-04-01 13:00 | 2010-04-01 17:00 | 267 | 38d |
| 269 |  | Control Table Tests | 4h | 2010-04-02 08:00 | 2010-04-02 12:00 | 268 | 38d |
| 270 | 1.5.2.3 | **Business Rule Manager Test** | 4d | 2010-04-02 13:00 | 2010-04-08 12:00 |  | 38d |
| 271 |  | GUID | 4h | 2010-04-02 13:00 | 2010-04-02 17:00 | 269 | 38d |
| 272 |  | Database Calls | 4h | 2010-04-05 08:00 | 2010-04-05 12:00 | 271 | 38d |
| 273 |  | Security | 4h | 2010-04-05 13:00 | 2010-04-05 17:00 | 272 | 38d |
| 274 |  | Insert | 4h | 2010-04-06 08:00 | 2010-04-06 12:00 | 273 | 38d |
| 275 |  | Update | 4h | 2010-04-06 13:00 | 2010-04-06 17:00 | 274 | 38d |
| 276 |  | Delete | 4h | 2010-04-07 08:00 | 2010-04-07 12:00 | 275 | 38d |
| 277 |  | Reports | 4h | 2010-04-07 13:00 | 2010-04-07 17:00 | 276 | 38d |
| 278 |  | Validation and Checking | 4h | 2010-04-08 08:00 | 2010-04-08 12:00 | 277 | 38d |
| 279 | 1.5.2.4 | **Warehouse Manager Test** | 3d | 2010-04-08 13:00 | 2010-04-13 12:00 |  | 38d |
| 280 |  | General Functions IN (I_) | 4h | 2010-04-08 13:00 | 2010-04-08 17:00 | 278 | 38d |

| ID | WBS | Task | Duration | Start | Finish | Predecessors | Total float |
| --- | --- | --- | --- | --- | --- | --- | --- |
| 281 |  | General Functions OUT (O_) | 4h | 2010-04-09 08:00 | 2010-04-09 12:00 | 280 | 38d |
| 282 |  | General Functions Data Management (D_) | 4h | 2010-04-09 13:00 | 2010-04-09 17:00 | 281 | 38d |
| 283 |  | CFD Functions (C_) | 4h | 2010-04-12 08:00 | 2010-04-12 12:00 | 282 | 38d |
| 284 |  | Plog Function (F_) | 4h | 2010-04-12 13:00 | 2010-04-12 17:00 | 283 | 38d |
| 285 |  | TBD | 4h | 2010-04-13 08:00 | 2010-04-13 12:00 | 284 | 38d |
| 286 |  | Composer Test | 4h | 2010-04-13 13:00 | 2010-04-13 17:00 | 285 | 38d |
| 287 |  | Components Tests | 4h | 2010-04-14 08:00 | 2010-04-14 12:00 | 286 | 38d |
| 288 |  | Integration Tests | 4h | 2010-04-14 13:00 | 2010-04-14 17:00 | 287 | 38d |
| 289 | 1.5.3 | **Library Module Development** | 22.5d | 2010-04-15 08:00 | 2010-05-17 12:00 |  | 38d |
| 290 | 1.5.3.1 | **Database.pm** | 2.5d | 2010-04-15 08:00 | 2010-04-19 12:00 |  | 38d |
| 291 |  | Define all functions | 4h | 2010-04-15 08:00 | 2010-04-15 12:00 | 288 | 38d |
| 292 |  | Build test to test each function | 4h | 2010-04-15 13:00 | 2010-04-15 17:00 | 291 | 38d |
| 293 |  | Create each function | 4h | 2010-04-16 08:00 | 2010-04-16 12:00 | 292 | 38d |
| 294 |  | Determine the use of functions in other libraries | 4h | 2010-04-16 13:00 | 2010-04-16 17:00 | 293 | 38d |
| 295 |  | Document each function for IN/OUT function | 4h | 2010-04-19 08:00 | 2010-04-19 12:00 | 294 | 38d |
| 296 | 1.5.3.2 | **Storage.pm** | 2.5d | 2010-04-19 13:00 | 2010-04-21 17:00 |  | 38d |
| 297 |  | Define all functions | 4h | 2010-04-19 13:00 | 2010-04-19 17:00 | 295 | 38d |
| 298 |  | Build test to test each function | 4h | 2010-04-20 08:00 | 2010-04-20 12:00 | 297 | 38d |
| 299 |  | Create each function | 4h | 2010-04-20 13:00 | 2010-04-20 17:00 | 298 | 38d |
| 300 |  | Determine the use of functions in other libraries | 4h | 2010-04-21 08:00 | 2010-04-21 12:00 | 299 | 38d |
| 301 |  | Document each function for IN/OUT function | 4h | 2010-04-21 13:00 | 2010-04-21 17:00 | 300 | 38d |
| 302 | 1.5.3.3 | **Dataset.pm** | 2.5d | 2010-04-22 08:00 | 2010-04-26 12:00 |  | 38d |
| 303 |  | Define all functions | 4h | 2010-04-22 08:00 | 2010-04-22 12:00 | 301 | 38d |
| 304 |  | Build test to test each function | 4h | 2010-04-22 13:00 | 2010-04-22 17:00 | 303 | 38d |
| 305 |  | Create each function | 4h | 2010-04-23 08:00 | 2010-04-23 12:00 | 304 | 38d |
| 306 |  | Determine the use of functions in other libraries | 4h | 2010-04-23 13:00 | 2010-04-23 17:00 | 305 | 38d |
| 307 |  | Document each function for IN/OUT function | 4h | 2010-04-26 08:00 | 2010-04-26 12:00 | 306 | 38d |
| 308 | 1.5.3.4 | **Plog.pm** | 2.5d | 2010-04-26 13:00 | 2010-04-28 17:00 |  | 38d |
| 309 |  | Define all functions | 4h | 2010-04-26 13:00 | 2010-04-26 17:00 | 307 | 38d |
| 310 |  | Build test to test each function | 4h | 2010-04-27 08:00 | 2010-04-27 12:00 | 309 | 38d |
| 311 |  | Create each function | 4h | 2010-04-27 13:00 | 2010-04-27 17:00 | 310 | 38d |
| 312 |  | Determine the use of functions in other libraries | 4h | 2010-04-28 08:00 | 2010-04-28 12:00 | 311 | 38d |
| 313 |  | Document each function for IN/OUT function | 4h | 2010-04-28 13:00 | 2010-04-28 17:00 | 312 | 38d |
| 314 | 1.5.3.5 | **CFD.pm** | 2.5d | 2010-04-29 08:00 | 2010-05-03 12:00 |  | 38d |
| 315 |  | Define all functions | 4h | 2010-04-29 08:00 | 2010-04-29 12:00 | 313 | 38d |
| 316 |  | Build test to test each function | 4h | 2010-04-29 13:00 | 2010-04-29 17:00 | 315 | 38d |
| 317 |  | Create each function | 4h | 2010-04-30 08:00 | 2010-04-30 12:00 | 316 | 38d |
| 318 |  | Determine the use of functions in other libraries | 4h | 2010-04-30 13:00 | 2010-04-30 17:00 | 317 | 38d |
| 319 |  | Document each function for IN/OUT function | 4h | 2010-05-03 08:00 | 2010-05-03 12:00 | 318 | 38d |
| 320 | 1.5.3.6 | **ComBld.pm** | 2.5d | 2010-05-03 13:00 | 2010-05-05 17:00 |  | 38d |
| 321 |  | Define all functions | 4h | 2010-05-03 13:00 | 2010-05-03 17:00 | 319 | 38d |
| 322 |  | Build test to test each function | 4h | 2010-05-04 08:00 | 2010-05-04 12:00 | 321 | 38d |
| 323 |  | Create each function | 4h | 2010-05-04 13:00 | 2010-05-04 17:00 | 322 | 38d |
| 324 |  | Determine the use of functions in other libraries | 4h | 2010-05-05 08:00 | 2010-05-05 12:00 | 323 | 38d |
| 325 |  | Document each function for IN/OUT function | 4h | 2010-05-05 13:00 | 2010-05-05 17:00 | 324 | 38d |
| 326 | 1.5.3.7 | **Composer.pm** | 2.5d | 2010-05-06 08:00 | 2010-05-10 12:00 |  | 38d |
| 327 |  | Define all functions | 4h | 2010-05-06 08:00 | 2010-05-06 12:00 | 325 | 38d |
| 328 |  | Build test to test each function | 4h | 2010-05-06 13:00 | 2010-05-06 17:00 | 327 | 38d |
| 329 |  | Create each function | 4h | 2010-05-07 08:00 | 2010-05-07 12:00 | 328 | 38d |
| 330 |  | Determine the use of functions in other libraries | 4h | 2010-05-07 13:00 | 2010-05-07 17:00 | 329 | 38d |
| 331 |  | Document each function for IN/OUT function | 4h | 2010-05-10 08:00 | 2010-05-10 12:00 | 330 | 38d |
| 332 | 1.5.3.8 | **Sending.pm** | 2.5d | 2010-05-10 13:00 | 2010-05-12 17:00 |  | 38d |
| 333 |  | Define all functions | 4h | 2010-05-10 13:00 | 2010-05-10 17:00 | 331 | 38d |
| 334 |  | Build test to test each function | 4h | 2010-05-11 08:00 | 2010-05-11 12:00 | 333 | 38d |
| 335 |  | Create each function | 4h | 2010-05-11 13:00 | 2010-05-11 17:00 | 334 | 38d |
| 336 |  | Determine the use of functions in other libraries | 4h | 2010-05-12 08:00 | 2010-05-12 12:00 | 335 | 38d |
| 337 |  | Document each function for IN/OUT function | 4h | 2010-05-12 13:00 | 2010-05-12 17:00 | 336 | 38d |
| 338 | 1.5.3.9 | **Mail.pm** | 2.5d | 2010-05-13 08:00 | 2010-05-17 12:00 |  | 38d |
| 339 |  | Define all functions | 4h | 2010-05-13 08:00 | 2010-05-13 12:00 | 337 | 38d |
| 340 |  | Build test to test each function | 4h | 2010-05-13 13:00 | 2010-05-13 17:00 | 339 | 38d |
| 341 |  | Create each function | 4h | 2010-05-14 08:00 | 2010-05-14 12:00 | 340 | 38d |
| 342 |  | Determine the use of functions in other libraries | 4h | 2010-05-14 13:00 | 2010-05-14 17:00 | 341 | 38d |
| 343 |  | Document each function for IN/OUT function | 4h | 2010-05-17 08:00 | 2010-05-17 12:00 | 342 | 38d |
| 344 | 1.5.4 | **Template Development** | 31.5d | 2010-05-17 13:00 | 2010-06-29 17:00 |  | 38d |
| 345 | 1.5.4.1 | **Forklift (FL)** | 4.5d | 2010-05-17 13:00 | 2010-05-21 17:00 |  | 38d |
| 346 |  | Header Section | 4h | 2010-05-17 13:00 | 2010-05-17 17:00 | 343 | 38d |
| 347 |  | Variables | 4h | 2010-05-18 08:00 | 2010-05-18 12:00 | 346 | 38d |
| 348 |  | Top Timer Loop | 4h | 2010-05-18 13:00 | 2010-05-18 17:00 | 347 | 38d |
| 349 |  | File check | 4h | 2010-05-19 08:00 | 2010-05-19 12:00 | 348 | 38d |
| 350 |  | Top Process Section | 4h | 2010-05-19 13:00 | 2010-05-19 17:00 | 349 | 38d |

| ID | WBS | Task | Duration | Start | Finish | Predecessors | Total float |
| --- | --- | --- | --- | --- | --- | --- | --- |
| 351 |  | Processes | 4h | 2010-05-20 08:00 | 2010-05-20 12:00 | 350 | 38d |
| 352 |  | Bottom Process Section | 4h | 2010-05-20 13:00 | 2010-05-20 17:00 | 351 | 38d |
| 353 |  | Bottom Timer Loop | 4h | 2010-05-21 08:00 | 2010-05-21 12:00 | 352 | 38d |
| 354 |  | Close Section | 4h | 2010-05-21 13:00 | 2010-05-21 17:00 | 353 | 38d |
| 355 | 1.5.4.2 | **Sorter (SO)** | 4.5d | 2010-05-24 08:00 | 2010-05-28 12:00 |  | 38d |
| 356 |  | Header Section | 4h | 2010-05-24 08:00 | 2010-05-24 12:00 | 354 | 38d |
| 357 |  | Variables | 4h | 2010-05-24 13:00 | 2010-05-24 17:00 | 356 | 38d |
| 358 |  | Top Timer Loop | 4h | 2010-05-25 08:00 | 2010-05-25 12:00 | 357 | 38d |
| 359 |  | File check | 4h | 2010-05-25 13:00 | 2010-05-25 17:00 | 358 | 38d |
| 360 |  | Top Process Section | 4h | 2010-05-26 08:00 | 2010-05-26 12:00 | 359 | 38d |
| 361 |  | Processes | 4h | 2010-05-26 13:00 | 2010-05-26 17:00 | 360 | 38d |
| 362 |  | Bottom Process Section | 4h | 2010-05-27 08:00 | 2010-05-27 12:00 | 361 | 38d |
| 363 |  | Bottom Timer Loop | 4h | 2010-05-27 13:00 | 2010-05-27 17:00 | 362 | 38d |
| 364 |  | Close Section | 4h | 2010-05-28 08:00 | 2010-05-28 12:00 | 363 | 38d |
| 365 | 1.5.4.3 | **Cataloger (CT)** | 4.5d | 2010-05-28 13:00 | 2010-06-03 17:00 |  | 38d |
| 366 |  | Header Section | 4h | 2010-05-28 13:00 | 2010-05-28 17:00 | 364 | 38d |
| 367 |  | Variables | 4h | 2010-05-31 08:00 | 2010-05-31 12:00 | 366 | 38d |
| 368 |  | Top Timer Loop | 4h | 2010-05-31 13:00 | 2010-05-31 17:00 | 367 | 38d |
| 369 |  | File check | 4h | 2010-06-01 08:00 | 2010-06-01 12:00 | 368 | 38d |
| 370 |  | Top Process Section | 4h | 2010-06-01 13:00 | 2010-06-01 17:00 | 369 | 38d |
| 371 |  | Processes | 4h | 2010-06-02 08:00 | 2010-06-02 12:00 | 370 | 38d |
| 372 |  | Bottom Process Section | 4h | 2010-06-02 13:00 | 2010-06-02 17:00 | 371 | 38d |
| 373 |  | Bottom Timer Loop | 4h | 2010-06-03 08:00 | 2010-06-03 12:00 | 372 | 38d |
| 374 |  | Close Section | 4h | 2010-06-03 13:00 | 2010-06-03 17:00 | 373 | 38d |
| 375 | 1.5.4.4 | **Stocker (ST)** | 4.5d | 2010-06-04 08:00 | 2010-06-10 12:00 |  | 38d |
| 376 |  | Header Section | 4h | 2010-06-04 08:00 | 2010-06-04 12:00 | 374 | 38d |
| 377 |  | Variables | 4h | 2010-06-04 13:00 | 2010-06-04 17:00 | 376 | 38d |
| 378 |  | Top Timer Loop | 4h | 2010-06-07 08:00 | 2010-06-07 12:00 | 377 | 38d |
| 379 |  | File check | 4h | 2010-06-07 13:00 | 2010-06-07 17:00 | 378 | 38d |
| 380 |  | Top Process Section | 4h | 2010-06-08 08:00 | 2010-06-08 12:00 | 379 | 38d |
| 381 |  | Processes | 4h | 2010-06-08 13:00 | 2010-06-08 17:00 | 380 | 38d |
| 382 |  | Bottom Process Section | 4h | 2010-06-09 08:00 | 2010-06-09 12:00 | 381 | 38d |
| 383 |  | Bottom Timer Loop | 4h | 2010-06-09 13:00 | 2010-06-09 17:00 | 382 | 38d |
| 384 |  | Close Section | 4h | 2010-06-10 08:00 | 2010-06-10 12:00 | 383 | 38d |
| 385 | 1.5.4.5 | **Retriever (RT)** | 4.5d | 2010-06-10 13:00 | 2010-06-16 17:00 |  | 38d |
| 386 |  | Header Section | 4h | 2010-06-10 13:00 | 2010-06-10 17:00 | 384 | 38d |
| 387 |  | Variables | 4h | 2010-06-11 08:00 | 2010-06-11 12:00 | 386 | 38d |
| 388 |  | Top Timer Loop | 4h | 2010-06-11 13:00 | 2010-06-11 17:00 | 387 | 38d |
| 389 |  | File check | 4h | 2010-06-14 08:00 | 2010-06-14 12:00 | 388 | 38d |
| 390 |  | Top Process Section | 4h | 2010-06-14 13:00 | 2010-06-14 17:00 | 389 | 38d |
| 391 |  | Processes | 4h | 2010-06-15 08:00 | 2010-06-15 12:00 | 390 | 38d |
| 392 |  | Bottom Process Section | 4h | 2010-06-15 13:00 | 2010-06-15 17:00 | 391 | 38d |
| 393 |  | Bottom Timer Loop | 4h | 2010-06-16 08:00 | 2010-06-16 12:00 | 392 | 38d |
| 394 |  | Close Section | 4h | 2010-06-16 13:00 | 2010-06-16 17:00 | 393 | 38d |
| 395 | 1.5.4.6 | **Packager (PR)** | 4.5d | 2010-06-17 08:00 | 2010-06-23 12:00 |  | 38d |
| 396 |  | Header Section | 4h | 2010-06-17 08:00 | 2010-06-17 12:00 | 394 | 38d |
| 397 |  | Variables | 4h | 2010-06-17 13:00 | 2010-06-17 17:00 | 396 | 38d |
| 398 |  | Top Timer Loop | 4h | 2010-06-18 08:00 | 2010-06-18 12:00 | 397 | 38d |
| 399 |  | File check | 4h | 2010-06-18 13:00 | 2010-06-18 17:00 | 398 | 38d |
| 400 |  | Top Process Section | 4h | 2010-06-21 08:00 | 2010-06-21 12:00 | 399 | 38d |
| 401 |  | Processes | 4h | 2010-06-21 13:00 | 2010-06-21 17:00 | 400 | 38d |
| 402 |  | Bottom Process Section | 4h | 2010-06-22 08:00 | 2010-06-22 12:00 | 401 | 38d |
| 403 |  | Bottom Timer Loop | 4h | 2010-06-22 13:00 | 2010-06-22 17:00 | 402 | 38d |
| 404 |  | Close Section | 4h | 2010-06-23 08:00 | 2010-06-23 12:00 | 403 | 38d |
| 405 | 1.5.4.7 | **Sender (SD)** | 4.5d | 2010-06-23 13:00 | 2010-06-29 17:00 |  | 38d |
| 406 |  | Header Section | 4h | 2010-06-23 13:00 | 2010-06-23 17:00 | 404 | 38d |
| 407 |  | Variables | 4h | 2010-06-24 08:00 | 2010-06-24 12:00 | 406 | 38d |
| 408 |  | Top Timer Loop | 4h | 2010-06-24 13:00 | 2010-06-24 17:00 | 407 | 38d |
| 409 |  | File check | 4h | 2010-06-25 08:00 | 2010-06-25 12:00 | 408 | 38d |
| 410 |  | Top Process Section | 4h | 2010-06-25 13:00 | 2010-06-25 17:00 | 409 | 38d |
| 411 |  | Processes | 4h | 2010-06-28 08:00 | 2010-06-28 12:00 | 410 | 38d |
| 412 |  | Bottom Process Section | 4h | 2010-06-28 13:00 | 2010-06-28 17:00 | 411 | 38d |
| 413 |  | Bottom Timer Loop | 4h | 2010-06-29 08:00 | 2010-06-29 12:00 | 412 | 38d |
| 414 |  | Close Section | 4h | 2010-06-29 13:00 | 2010-06-29 17:00 | 413 | 38d |
| 415 | 1.5.5 | **Composer Builder** | 9.5d | 2010-06-30 08:00 | 2010-07-13 12:00 |  | 38d |
| 416 | 1.5.5.1 | **Composer Template** | 4d | 2010-06-30 08:00 | 2010-07-05 17:00 |  | 38d |
| 417 |  | Header Section | 4h | 2010-06-30 08:00 | 2010-06-30 12:00 | 414 | 38d |
| 418 |  | Variables | 4h | 2010-06-30 13:00 | 2010-06-30 17:00 | 417 | 38d |
| 419 |  | Template Loader | 4h | 2010-07-01 08:00 | 2010-07-01 12:00 | 418 | 38d |
| 420 |  | Control Table Load | 4h | 2010-07-01 13:00 | 2010-07-01 17:00 | 419 | 38d |

| ID | WBS | Task | Duration | Start | Finish | Predecessors | Total float |
| --- | --- | --- | --- | --- | --- | --- | --- |
| 421 |  | Top Process Build Loop | 4h | 2010-07-02 08:00 | 2010-07-02 12:00 | 420 | 38d |
| 422 |  | Build construction paragraphs | 4h | 2010-07-02 13:00 | 2010-07-02 17:00 | 421 | 38d |
| 423 |  | Bottom Process Section | 4h | 2010-07-05 08:00 | 2010-07-05 12:00 | 422 | 38d |
| 424 |  | Close Section | 4h | 2010-07-05 13:00 | 2010-07-05 17:00 | 423 | 38d |
| 425 | 1.5.5.2 | **Composer Builder** | 3d | 2010-07-06 08:00 | 2010-07-08 17:00 |  | 38d |
| 426 |  | Composer Builder Detailed Design and Philosophy | 4h | 2010-07-06 08:00 | 2010-07-06 12:00 | 424 | 38d |
| 427 |  | Composer Builder Structure | 4h | 2010-07-06 13:00 | 2010-07-06 17:00 | 426 | 38d |
| 428 |  | Composer Builder Library | 4h | 2010-07-07 08:00 | 2010-07-07 12:00 | 427 | 38d |
| 429 |  | Composer Builder Metadata | 4h | 2010-07-07 13:00 | 2010-07-07 17:00 | 428 | 38d |
| 430 |  | Composer Builder Compiler Script | 4h | 2010-07-08 08:00 | 2010-07-08 12:00 | 429 | 38d |
| 431 |  | Composer Builder exception and valiation Section | 4h | 2010-07-08 13:00 | 2010-07-08 17:00 | 430 | 38d |
| 432 | 1.5.5.3 | **Composer** | 2d | 2010-07-09 08:00 | 2010-07-12 17:00 |  | 38d |
| 433 |  | Composer Template Development | 4h | 2010-07-09 08:00 | 2010-07-09 12:00 | 431 | 38d |
| 434 |  | Composer Library Development | 4h | 2010-07-09 13:00 | 2010-07-09 17:00 | 433 | 38d |
| 435 |  | Composer Metadata Development | 4h | 2010-07-12 08:00 | 2010-07-12 12:00 | 434 | 38d |
| 436 |  | Composer Compiler Script Development | 4h | 2010-07-12 13:00 | 2010-07-12 17:00 | 435 | 38d |
| 437 |  | Composer Control | 4h | 2010-07-13 08:00 | 2010-07-13 12:00 | 436 | 38d |
| 438 | 1.5.6 | **Phase One Integration** | 11.5d | 2010-07-13 13:00 | 2010-07-28 17:00 |  | 38d |
| 439 |  | Control Table Data Definition | 4h | 2010-07-13 13:00 | 2010-07-13 17:00 | 437 | 38d |
| 440 | 1.5.6.2 | **Library Control Table Interface** | 8d | 2010-07-14 08:00 | 2010-07-23 17:00 |  | 38d |
| 441 |  | Common Library Paragraphs | 4h | 2010-07-14 08:00 | 2010-07-14 12:00 | 439 | 38d |
| 442 |  | Common Variable Paragraphs | 4h | 2010-07-14 13:00 | 2010-07-14 17:00 | 441 | 38d |
| 443 |  | Common Timer Paragraphs | 4h | 2010-07-15 08:00 | 2010-07-15 12:00 | 442 | 38d |
| 444 |  | Common Header Paragraphs | 4h | 2010-07-15 13:00 | 2010-07-15 17:00 | 443 | 38d |
| 445 |  | Forklift (FL) Process Paragraphs | 4h | 2010-07-16 08:00 | 2010-07-16 12:00 | 444 | 38d |
| 446 |  | Sorter (SO)Process Paragraphs | 4h | 2010-07-16 13:00 | 2010-07-16 17:00 | 445 | 38d |
| 447 |  | Cataloger (CT)Process Paragraphs | 4h | 2010-07-19 08:00 | 2010-07-19 12:00 | 446 | 38d |
| 448 |  | Stocker (ST)Process Paragraphs | 4h | 2010-07-19 13:00 | 2010-07-19 17:00 | 447 | 38d |
| 449 |  | Retriever (RT)Process Paragraphs | 4h | 2010-07-20 08:00 | 2010-07-20 12:00 | 448 | 38d |
| 450 |  | Packager (PR)Process Paragraphs | 4h | 2010-07-20 13:00 | 2010-07-20 17:00 | 449 | 38d |
| 451 |  | Sender (SD)Process Paragraphs | 4h | 2010-07-21 08:00 | 2010-07-21 12:00 | 450 | 38d |
| 452 |  | Composer Builder Paragraphs | 4h | 2010-07-21 13:00 | 2010-07-21 17:00 | 451 | 38d |
| 453 |  | Composer Paragraphs | 4h | 2010-07-22 08:00 | 2010-07-22 12:00 | 452 | 38d |
| 454 |  | CFD Paragraphs | 4h | 2010-07-22 13:00 | 2010-07-22 17:00 | 453 | 38d |
| 455 |  | PowerLOG Paragraphs | 4h | 2010-07-23 08:00 | 2010-07-23 12:00 | 454 | 38d |
| 456 |  | Other Metadata | 4h | 2010-07-23 13:00 | 2010-07-23 17:00 | 455 | 38d |
| 457 | 1.5.6.3 | **Warehouse Manager** | 3d | 2010-07-26 08:00 | 2010-07-28 17:00 |  | 38d |
| 458 |  | General Functions IN (I_) | 4h | 2010-07-26 08:00 | 2010-07-26 12:00 | 440 | 38d |
| 459 |  | General Functions OUT (O_) | 4h | 2010-07-26 13:00 | 2010-07-26 17:00 | 458 | 38d |
| 460 |  | General Functions Data Management (D_) | 4h | 2010-07-27 08:00 | 2010-07-27 12:00 | 459 | 38d |
| 461 |  | CFD Functions (C_) | 4h | 2010-07-27 13:00 | 2010-07-27 17:00 | 460 | 38d |
| 462 |  | Plog Function (F_) | 4h | 2010-07-28 08:00 | 2010-07-28 12:00 | 461 | 38d |
| 463 |  | TBD Functions | 4h | 2010-07-28 13:00 | 2010-07-28 17:00 | 462 | 38d |
| 464 | 1.5.7 | **Phase Two Integration** | 1d | 2010-07-29 08:00 | 2010-07-29 17:00 |  | 38d |
| 465 |  | Composer Builder | 4h | 2010-07-29 08:00 | 2010-07-29 12:00 | 463 | 38d |
| 466 |  | Composer Builder Library Interface | 4h | 2010-07-29 13:00 | 2010-07-29 17:00 | 465 | 38d |
| 467 | 1.5.8 | **Phase Three Process Building** | 1d | 2010-07-30 08:00 | 2010-07-30 17:00 |  | 38d |
| 468 |  | Metadata defintion for Each Template Defintion | 4h | 2010-07-30 08:00 | 2010-07-30 12:00 | 466 | 38d |
| 469 |  | Composer Metadata merge | 4h | 2010-07-30 13:00 | 2010-07-30 17:00 | 468 | 38d |
| 470 | 1.5.9 | **Phase Four Component Integration** | 3.5d | 2010-08-02 08:00 | 2010-08-05 12:00 |  | 38d |
| 471 |  | Forklift | 4h | 2010-08-02 08:00 | 2010-08-02 12:00 | 469 | 38d |
| 472 |  | Sorter | 4h | 2010-08-02 13:00 | 2010-08-02 17:00 | 471 | 38d |
| 473 |  | Cataloger | 4h | 2010-08-03 08:00 | 2010-08-03 12:00 | 472 | 38d |
| 474 |  | Stocker | 4h | 2010-08-03 13:00 | 2010-08-03 17:00 | 473 | 38d |
| 475 |  | Retriever | 4h | 2010-08-04 08:00 | 2010-08-04 12:00 | 474 | 38d |
| 476 |  | Packager | 4h | 2010-08-04 13:00 | 2010-08-04 17:00 | 475 | 38d |
| 477 |  | Sender | 4h | 2010-08-05 08:00 | 2010-08-05 12:00 | 476 | 38d |
| 478 | 1.5.10 | **Deployment Plan** | 1.5d | 2010-08-05 13:00 | 2010-08-06 17:00 |  | 38d |
| 479 |  | Database Table and Metadata Deployment | 4h | 2010-08-05 13:00 | 2010-08-05 17:00 | 477 | 38d |
| 480 |  | Application Deployment | 4h | 2010-08-06 08:00 | 2010-08-06 12:00 | 479 | 38d |
| 481 |  | In Place Deployment Test Suite | 4h | 2010-08-06 13:00 | 2010-08-06 17:00 | 480 | 38d |
| 482 | 1.6 | **Development Testing Cycle** | 3.5d | 2010-08-09 08:00 | 2010-08-12 12:00 |  | 38d |
| 483 | 1.6.1 | **Phase One** | 2d | 2010-08-09 08:00 | 2010-08-10 17:00 |  | 38d |
| 484 |  | Library Module Tests | 4h | 2010-08-09 08:00 | 2010-08-09 12:00 | 481 | 38d |
| 485 |  | Control Table Tests | 4h | 2010-08-09 13:00 | 2010-08-09 17:00 | 484 | 38d |
| 486 |  | Business Rule Manager Test | 4h | 2010-08-10 08:00 | 2010-08-10 12:00 | 485 | 38d |
| 487 |  | Warehouse Manager Test | 4h | 2010-08-10 13:00 | 2010-08-10 17:00 | 486 | 38d |
| 488 | 1.6.2 | **Phase Two** | 0.5d | 2010-08-11 08:00 | 2010-08-11 12:00 |  | 38d |
| 489 |  | Composer Test | 4h | 2010-08-11 08:00 | 2010-08-11 12:00 | 487 | 38d |
| 490 | 1.6.3 | **Phase Three** | 0.5d | 2010-08-11 13:00 | 2010-08-11 17:00 |  | 38d |

| ID | WBS | Task | Duration | Start | Finish | Predecessors | Total float |
| --- | --- | --- | --- | --- | --- | --- | --- |
| 491 |  | Components Tests | 4h | 2010-08-11 13:00 | 2010-08-11 17:00 | 489 | 38d |
| 492 | 1.6.4 | **Phase Four** | 0.5d | 2010-08-12 08:00 | 2010-08-12 12:00 |  | 38d |
| 493 |  | Integration Tests | 4h | 2010-08-12 08:00 | 2010-08-12 12:00 | 491 | 38d |
| 494 | 1.7 | **Functional Testing Cycle** | 3.5d | 2010-08-12 13:00 | 2010-08-17 17:00 |  | 38d |
| 495 | 1.7.1 | **Phase One** | 2d | 2010-08-12 13:00 | 2010-08-16 12:00 |  | 38d |
| 496 |  | Library Module Tests | 4h | 2010-08-12 13:00 | 2010-08-12 17:00 | 493 | 38d |
| 497 |  | Control Table Tests | 4h | 2010-08-13 08:00 | 2010-08-13 12:00 | 496 | 38d |
| 498 |  | Business Rule Manager Test | 4h | 2010-08-13 13:00 | 2010-08-13 17:00 | 497 | 38d |
| 499 |  | Warehouse Manager Test | 4h | 2010-08-16 08:00 | 2010-08-16 12:00 | 498 | 38d |
| 500 | 1.7.2 | **Phase Two** | 0.5d | 2010-08-16 13:00 | 2010-08-16 17:00 |  | 38d |
| 501 |  | Composer Test | 4h | 2010-08-16 13:00 | 2010-08-16 17:00 | 499 | 38d |
| 502 | 1.7.3 | **Phase Three** | 0.5d | 2010-08-17 08:00 | 2010-08-17 12:00 |  | 38d |
| 503 |  | Components Tests | 4h | 2010-08-17 08:00 | 2010-08-17 12:00 | 501 | 38d |
| 504 | 1.7.4 | **Phase Four** | 0.5d | 2010-08-17 13:00 | 2010-08-17 17:00 |  | 38d |
| 505 |  | Integration Tests | 4h | 2010-08-17 13:00 | 2010-08-17 17:00 | 503 | 38d |
| 506 | 1.8 | **Move from Test Environment** | 1.5d | 2010-08-18 08:00 | 2010-08-19 12:00 |  | 38d |
| 507 |  | Package for Deployment | 4h | 2010-08-18 08:00 | 2010-08-18 12:00 | 505 | 38d |
| 508 |  | Submit for Move | 4h | 2010-08-18 13:00 | 2010-08-18 17:00 | 507 | 38d |
| 509 |  | Run Development Test Suite | 4h | 2010-08-19 08:00 | 2010-08-19 12:00 | 508 | 38d |
| 510 | 1.9 | **Process Signoff** | 1.5d | 2010-08-19 13:00 | 2010-08-20 17:00 |  | 38d |
| 511 |  | Acceptance Signoff | 4h | 2010-08-19 13:00 | 2010-08-19 17:00 | 509 | 38d |
| 512 |  | Lessons Learned | 4h | 2010-08-20 08:00 | 2010-08-20 12:00 | 511 | 38d |
| 513 |  | Deliver Final Documentation | 4h | 2010-08-20 13:00 | 2010-08-20 17:00 | 512 | 38d |

## Version 2 (saved 2009-11-24, file LOGSA CCBMER BFH Receiving.mpp)

Note of the change: SQL Templates baseline

Last finish 2010-08-20 → 2010-04-13 (-129d). Complete tasks 0 → 10.

Added:

| ID | Task | Duration | Start | Finish | Predecessors | Constraint |
| --- | --- | --- | --- | --- | --- | --- |
| 4 | **Maintain CCBMER World** | 6d | 2009-11-16 08:00 A | 2009-11-23 17:00 |  |  |
| 5 | **180 Tables** | 6d | 2009-11-16 08:00 | 2009-11-23 17:00 |  |  |
| 6 | cbm_cmd_tabl | 1h | 2009-11-20 09:00 | 2009-11-20 10:00 | 50 | start no earlier than 2009-11-20 08:00 |
| 7 | cbm_crea_tabl | 1h | 2009-11-20 10:00 | 2009-11-20 11:00 | 6 | start no earlier than 2009-11-20 08:00 |
| 8 | cbm_run_tabl | 1h | 2009-11-20 11:00 | 2009-11-20 12:00 | 7 | start no earlier than 2009-11-20 08:00 |
| 9 | **cbm_func_warn** | 1.12d | 2009-11-16 08:00 | 2009-11-17 09:00 |  |  |
| 10 | 170 Sequence | 1h | 2009-11-16 08:00 | 2009-11-16 09:00 |  | start no earlier than 2009-11-16 08:00 |
| 11 | 180 Table | 4h | 2009-11-16 09:00 | 2009-11-16 14:00 | 10 | start no earlier than 2009-11-16 08:00 |
| 12 | 210 Indexes | 1h | 2009-11-16 14:00 | 2009-11-16 15:00 | 11 | start no earlier than 2009-11-16 08:00 |
| 13 | 220 Constraints | 1h | 2009-11-16 15:00 | 2009-11-16 16:00 | 12 | start no earlier than 2009-11-16 08:00 |
| 14 | 280 Triggers | 1h | 2009-11-16 16:00 | 2009-11-16 17:00 | 13 | start no earlier than 2009-11-16 08:00 |
| 15 | 310 Schema Post Deployment | 1h | 2009-11-17 08:00 | 2009-11-17 09:00 | 14 | start no earlier than 2009-11-16 08:00 |
| 16 | **cbm_process_control** | 1.75d | 2009-11-16 08:00 | 2009-11-17 15:00 |  |  |
| 17 | 170 Sequence | 1h | 2009-11-16 08:00 | 2009-11-16 09:00 |  | start no earlier than 2009-11-16 08:00 |
| 18 | 180 Table | 4h | 2009-11-16 09:00 | 2009-11-16 14:00 | 17 | start no earlier than 2009-11-16 08:00 |
| 19 | 210 Indexes | 1h | 2009-11-16 14:00 | 2009-11-16 15:00 | 18 | start no earlier than 2009-11-16 08:00 |
| 20 | 220 Constraints | 1h | 2009-11-16 15:00 | 2009-11-16 16:00 | 19 | start no earlier than 2009-11-16 08:00 |
| 21 | 280 Triggers | 1h | 2009-11-16 16:00 | 2009-11-16 17:00 | 20 | start no earlier than 2009-11-16 08:00 |
| 22 | **310 Schema Post Deployment** | 0.12d | 2009-11-17 14:00 | 2009-11-17 15:00 | 21 |  |
| 23 | Forklift (FL) | 15min | 2009-11-17 14:00 | 2009-11-17 14:15 | 27 |  |
| 24 | Sorter (SO) | 15min | 2009-11-17 14:15 | 2009-11-17 14:30 | 23 |  |
| 25 | Cataloger (CT) | 15min | 2009-11-17 14:30 | 2009-11-17 14:45 | 24 |  |
| 26 | Stocker (ST) | 15min | 2009-11-17 14:45 | 2009-11-17 15:00 | 25 |  |
| 27 | **cbm_process_control_audt** | 1d | 2009-11-16 14:00 | 2009-11-17 14:00 |  |  |
| 28 | 170 Sequence | 1h | 2009-11-16 14:00 | 2009-11-16 15:00 | 18 | start no earlier than 2009-09-16 08:00 |
| 29 | 180 Table | 4h | 2009-11-16 15:00 | 2009-11-17 10:00 | 28 |  |
| 30 | 210 Indexes | 1h | 2009-11-17 10:00 | 2009-11-17 11:00 | 29 |  |
| 31 | 220 Constraints | 1h | 2009-11-17 11:00 | 2009-11-17 12:00 | 30 |  |
| 32 | 280 Triggers | 1h | 2009-11-17 13:00 | 2009-11-17 14:00 | 31 |  |
| 33 | cbm_process_log | 1h | 2009-11-20 08:00 | 2009-11-20 09:00 |  | start no earlier than 2009-11-20 08:00 |
| 34 | **cbm_process_ref** | 6d | 2009-11-16 08:00 | 2009-11-23 17:00 |  |  |
| 35 | 170 Sequence | 1h | 2009-11-16 08:00 | 2009-11-16 09:00 |  | start no earlier than 2009-11-16 08:00 |
| 36 | 180 Table | 4h | 2009-11-16 09:00 | 2009-11-16 14:00 | 35 | start no earlier than 2009-11-16 08:00 |
| 37 | 210 Indexes | 1h | 2009-11-16 14:00 | 2009-11-16 15:00 | 36 | start no earlier than 2009-11-16 08:00 |
| 38 | 220 Constraints | 1h | 2009-11-16 15:00 | 2009-11-16 16:00 | 37 | start no earlier than 2009-11-16 08:00 |
| 39 | 280 Triggers | 1h | 2009-11-16 16:00 | 2009-11-16 17:00 | 38 | start no earlier than 2009-11-16 08:00 |
| 40 | 310 Schema Post Deployment | 1h | 2009-11-17 08:00 | 2009-11-17 09:00 | 39 | start no earlier than 2009-11-16 08:00 |
| 41 | **cbm_process_ref_audt** | 1d | 2009-11-23 08:00 | 2009-11-23 17:00 |  |  |
| 42 | 170 Sequence | 1h | 2009-11-23 08:00 | 2009-11-23 09:00 | 36 | start no earlier than 2009-11-23 08:00 |
| 43 | 180 Table | 4h | 2009-11-23 09:00 | 2009-11-23 14:00 | 42 |  |
| 44 | 210 Indexes | 1h | 2009-11-23 14:00 | 2009-11-23 15:00 | 43 |  |
| 45 | 220 Constraints | 1h | 2009-11-23 15:00 | 2009-11-23 16:00 | 44 |  |
| 46 | 280 Triggers | 1h | 2009-11-23 16:00 | 2009-11-23 17:00 | 45 |  |
| 47 | cbm_processes | 1h | 2009-11-20 08:00 | 2009-11-20 09:00 |  | start no earlier than 2009-11-20 08:00 |
| 48 | cbm_processes_hist | 1h | 2009-11-20 08:00 | 2009-11-20 09:00 |  | start no earlier than 2009-11-20 08:00 |
| 49 | cbm_tab_size_trk | 1h | 2009-11-20 08:00 | 2009-11-20 09:00 |  | start no earlier than 2009-11-20 08:00 |
| 50 | cbm_tabl_ref | 1h | 2009-11-20 08:00 | 2009-11-20 09:00 |  | start no earlier than 2009-11-20 08:00 |
| 51 | cbm_tabl_ref_audt | 1h | 2009-11-20 09:00 | 2009-11-20 10:00 | 50 | start no earlier than 2009-11-20 08:00 |
| 52 | **std_cbm_debug_tbl** | 1.12d | 2009-11-16 08:00 | 2009-11-17 09:00 |  |  |
| 53 | 170 Sequence | 1h | 2009-11-16 08:00 | 2009-11-16 09:00 |  | start no earlier than 2009-11-16 08:00 |
| 54 | 180 Table | 4h | 2009-11-16 09:00 | 2009-11-16 14:00 | 53 | start no earlier than 2009-11-16 08:00 |
| 55 | 210 Indexes | 1h | 2009-11-16 14:00 | 2009-11-16 15:00 | 54 | start no earlier than 2009-11-16 08:00 |
| 56 | 220 Constraints | 1h | 2009-11-16 15:00 | 2009-11-16 16:00 | 55 | start no earlier than 2009-11-16 08:00 |
| 57 | 280 Triggers | 1h | 2009-11-16 16:00 | 2009-11-16 17:00 | 56 | start no earlier than 2009-11-16 08:00 |
| 58 | 310 Schema Post Deployment | 1h | 2009-11-17 08:00 | 2009-11-17 09:00 | 57 | start no earlier than 2009-11-16 08:00 |
| 59 | **260 Functions** | 0.12d | 2009-11-23 08:00 A | 2009-11-23 09:00 A |  |  |
| 60 | cbm_get_prcss_cntrl_id | 1h | 2009-11-23 08:00 A | 2009-11-23 09:00 A |  | finish no earlier than 2009-09-15 17:00 |
| 61 | cbm_get_prcss_run_val | 1h | 2009-11-23 08:00 A | 2009-11-23 09:00 A |  | start no earlier than 2009-09-09 08:00 |
| 62 | run_today | 1h | 2009-11-23 08:00 A | 2009-11-23 09:00 A |  | finish no earlier than 2009-09-15 17:00 |
| 63 | **270 Procedures** | 0.38d | 2009-11-23 08:00 A | 2009-11-23 11:00 |  |  |
| 64 | **maintain_cbm_world** | 0.38d | 2009-11-23 08:00 A | 2009-11-23 11:00 |  |  |
| 65 | maintain_cbm_world | 2h | 2009-11-23 09:00 | 2009-11-23 11:00 | 59 |  |
| 66 | cbm_insupd_processlog | 2h | 2009-11-23 08:00 A | 2009-11-23 10:00 A | 59 | finish no earlier than 2009-09-15 17:00 |
| 67 | get_cbm_process_info | 2h | 2009-11-23 08:00 A | 2009-11-23 10:00 A | 59 | finish no earlier than 2009-09-15 17:00 |
| 68 | updt_cbm_processes | 2h | 2009-11-23 08:00 A | 2009-11-23 10:00 A | 59 | finish no earlier than 2009-09-15 17:00 |
| 69 | cbm_log_cleanup | 2h | 2009-11-23 08:00 A | 2009-11-23 10:00 A | 59 | finish no earlier than 2009-09-15 17:00 |
| 70 | cbm_debugtbl_cleanup | 2h | 2009-11-23 08:00 A | 2009-11-23 10:00 A | 59 | finish no earlier than 2009-09-15 17:00 |
| 71 | cleanup_weekly | 2h | 2009-11-23 08:00 A | 2009-11-23 10:00 A | 59 | finish no earlier than 2009-09-15 17:00 |
| 72 | table_size_tracking | 2h | 2009-11-23 08:00 A | 2009-11-23 10:00 A | 59 | finish no earlier than 2009-09-15 17:00 |

Removed: 2 Concept and Design; 3 Concept Statement; 4 Preliminary Design; 5 Design Review; 6 Overview Design; 7 Requirements Definition Review; 8 Functional Design Review; 9 Design Approval; 10 Environment Setup; 11 Hardware; 12 Servers (bulk file management); 13 Servers(database servers); 14 Software; 15 Operating System Definition and Specifications; 16 Development Tools; 17 Testing Tools; 41 Retriever; 42 Library Functions (common); 43 Library Functions (unique); 44 Template defintion with detailed documentation; 45 Packager; 46 Library Functions (common); 47 Library Functions (unique); 48 Template defintion with detailed documentation; 49 Sender; 50 Library Functions (common); 51 Library Functions (unique); 52 Template defintion with detailed documentation; 120 Retriever (RT); 121 Packager (PR); 122 Sender (SD); 128 Retriever (RT); 129 Packager (PR); 130 Sender (SD); 136 Retriever (RT); 137 Packager (PR); 138 Sender (SD); 144 Retriever (RT); 145 Packager (PR); 146 Sender (SD); 152 Retriever (RT); 153 Packager (PR); 154 Sender (SD); 160 Retriever (RT); 161 Packager (PR); 162 Sender (SD); 168 Retriever (RT); 169 Packager (PR); 170 Sender (SD); 171 TBD Tests; 172 TBD Tests; 173 TBD Tests; 174 TBD Tests; 183 RT - PR; 184 RT - WM; 185 PR - SD; 186 PR - WM; 187 END to END IN; 188 END to END OUT; 189 TBD Tests; 190 TBD Tests; 191 TBD Tests; 332 Sending.pm; 333 Define all functions; 334 Build test to test each function; 335 Create each function; 336 Determine the use of functions in other libraries; 337 Document each function for IN/OUT function; 385 Retriever (RT); 386 Header Section; 387 Variables; 388 Top Timer Loop; 389 File check; 390 Top Process Section; 391 Processes; 392 Bottom Process Section; 393 Bottom Timer Loop; 394 Close Section; 395 Packager (PR); 396 Header Section; 397 Variables; 398 Top Timer Loop; 399 File check; 400 Top Process Section; 401 Processes; 402 Bottom Process Section; 403 Bottom Timer Loop; 404 Close Section; 405 Sender (SD); 406 Header Section; 407 Variables; 408 Top Timer Loop; 409 File check; 410 Top Process Section; 411 Processes; 412 Bottom Process Section; 413 Bottom Timer Loop; 414 Close Section; 449 Retriever (RT)Process Paragraphs; 450 Packager (PR)Process Paragraphs; 451 Sender (SD)Process Paragraphs; 475 Retriever; 476 Packager; 477 Sender

Changed:

| ID | Task | Start | Finish | Duration | Complete | Total float | Predecessors | Other |
| --- | --- | --- | --- | --- | --- | --- | --- | --- |
| 1 | **Bulk File Handler Receiving** | 2009-11-02 08:00 A | 2010-08-20 17:00 → 2010-04-13 17:00 (-129d) | 210d → 117d | 0% → 1% | 38d → 131d |  | was named Bulk File Handler |
| 2 | **Technical Specifications** | 2009-11-09 13:00 → 2009-11-02 08:00 A (-7d) | 2010-03-04 12:00 → 2009-12-25 12:00 (-69d) | 83d → 39.5d | 0% → 3% | 38d → 208.5d |  |  |
| 3 | Overview | 2009-11-09 13:00 → 2009-11-02 08:00 (-7d) | 2009-11-09 17:00 → 2009-11-02 12:00 (-7d) |  |  | 38d → 240.5d | Testing Tools → none |  |
| 77 | **Component Definition** | 2009-11-10 08:00 → 2009-11-02 08:00 (-8d) | 2009-12-04 17:00 → 2009-11-11 12:00 (-23d) | 19d → 7.5d |  | 38d → 208.5d |  |  |
| 78 | **Directory Architecture** | 2009-11-10 08:00 → 2009-11-02 13:00 (-8d) | 2009-11-10 17:00 → 2009-11-03 12:00 (-7d) |  |  | 38d → 240.5d |  |  |
| 79 | Bulk Management Process Directory Architecture | 2009-11-10 08:00 → 2009-11-02 13:00 (-8d) | 2009-11-10 12:00 → 2009-11-02 17:00 (-8d) |  |  | 38d → 240.5d |  |  |
| 80 | Long Term Storage Directory and Maintenance | 2009-11-10 13:00 → 2009-11-03 08:00 (-7d) | 2009-11-10 17:00 → 2009-11-03 12:00 (-7d) |  |  | 38d → 240.5d |  |  |
| 81 | **Template Definition** | 2009-11-11 08:00 → 2009-11-03 13:00 (-8d) | 2009-11-25 12:00 → 2009-11-11 12:00 (-14d) | 10.5d → 6d |  | 38d → 240.5d |  |  |
| 82 | **Forklift** | 2009-11-11 08:00 → 2009-11-03 13:00 (-8d) | 2009-11-12 12:00 → 2009-11-04 17:00 (-8d) |  |  | 38d → 240.5d |  |  |
| 83 | Library Functions (common) | 2009-11-11 08:00 → 2009-11-03 13:00 (-8d) | 2009-11-11 12:00 → 2009-11-03 17:00 (-8d) |  |  | 38d → 240.5d |  |  |
| 84 | Library Functions (unique) | 2009-11-11 13:00 → 2009-11-04 08:00 (-7d) | 2009-11-11 17:00 → 2009-11-04 12:00 (-7d) |  |  | 38d → 240.5d |  |  |
| 85 | Template defintion with detailed documentation | 2009-11-12 08:00 → 2009-11-04 13:00 (-8d) | 2009-11-12 12:00 → 2009-11-04 17:00 (-8d) |  |  | 38d → 240.5d |  |  |
| 86 | **Sorter** | 2009-11-12 13:00 → 2009-11-05 08:00 (-7d) | 2009-11-13 17:00 → 2009-11-06 12:00 (-7d) |  |  | 38d → 240.5d |  |  |
| 87 | Library Functions (common) | 2009-11-12 13:00 → 2009-11-05 08:00 (-7d) | 2009-11-12 17:00 → 2009-11-05 12:00 (-7d) |  |  | 38d → 240.5d |  |  |
| 88 | Library Functions (unique) | 2009-11-13 08:00 → 2009-11-05 13:00 (-8d) | 2009-11-13 12:00 → 2009-11-05 17:00 (-8d) |  |  | 38d → 240.5d |  |  |
| 89 | Template defintion with detailed documentation | 2009-11-13 13:00 → 2009-11-06 08:00 (-7d) | 2009-11-13 17:00 → 2009-11-06 12:00 (-7d) |  |  | 38d → 240.5d |  |  |
| 90 | **Cataloger** | 2009-11-16 08:00 → 2009-11-06 13:00 (-10d) | 2009-11-17 12:00 → 2009-11-09 17:00 (-8d) |  |  | 38d → 240.5d |  |  |
| 91 | Library Functions (common) | 2009-11-16 08:00 → 2009-11-06 13:00 (-10d) | 2009-11-16 12:00 → 2009-11-06 17:00 (-10d) |  |  | 38d → 240.5d |  |  |
| 92 | Library Functions (unique) | 2009-11-16 13:00 → 2009-11-09 08:00 (-7d) | 2009-11-16 17:00 → 2009-11-09 12:00 (-7d) |  |  | 38d → 240.5d |  |  |
| 93 | Template defintion with detailed documentation | 2009-11-17 08:00 → 2009-11-09 13:00 (-8d) | 2009-11-17 12:00 → 2009-11-09 17:00 (-8d) |  |  | 38d → 240.5d |  |  |
| 94 | **Stocker** | 2009-11-17 13:00 → 2009-11-10 08:00 (-7d) | 2009-11-18 17:00 → 2009-11-11 12:00 (-7d) |  |  | 38d → 240.5d |  |  |
| 95 | Library Functions (common) | 2009-11-17 13:00 → 2009-11-10 08:00 (-7d) | 2009-11-17 17:00 → 2009-11-10 12:00 (-7d) |  |  | 38d → 240.5d |  |  |
| 96 | Library Functions (unique) | 2009-11-18 08:00 → 2009-11-10 13:00 (-8d) | 2009-11-18 12:00 → 2009-11-10 17:00 (-8d) |  |  | 38d → 240.5d |  |  |
| 97 | Template defintion with detailed documentation | 2009-11-18 13:00 → 2009-11-11 08:00 (-7d) | 2009-11-18 17:00 → 2009-11-11 12:00 (-7d) |  |  | 38d → 240.5d |  |  |
| 98 | **Composer Defintion** | 2009-11-25 13:00 → 2009-11-02 08:00 (-23d) | 2009-12-04 17:00 → 2009-11-11 12:00 (-23d) |  |  | 38d → 208.5d |  |  |
| 99 | Control Tables | 2009-11-25 13:00 → 2009-11-02 08:00 (-23d) | 2009-11-25 17:00 → 2009-11-02 12:00 (-23d) |  |  | 38d → 208.5d | Template defintion with detailed documentation → none |  |
| 100 | Library Modules | 2009-11-26 08:00 → 2009-11-02 13:00 (-24d) | 2009-11-26 12:00 → 2009-11-02 17:00 (-24d) |  |  | 38d → 208.5d |  |  |
| 101 | **Business Rule Manager** | 2009-11-26 13:00 → 2009-11-03 08:00 (-23d) | 2009-11-30 17:00 → 2009-11-05 12:00 (-25d) |  |  | 38d → 208.5d |  |  |
| 102 | GUID Definition | 2009-11-26 13:00 → 2009-11-03 08:00 (-23d) | 2009-11-26 17:00 → 2009-11-03 12:00 (-23d) |  |  | 38d → 208.5d |  |  |
| 103 | Control Table Interface | 2009-11-27 08:00 → 2009-11-03 13:00 (-24d) | 2009-11-27 12:00 → 2009-11-03 17:00 (-24d) |  |  | 38d → 208.5d |  |  |
| 104 | Business rule management for BRM | 2009-11-27 13:00 → 2009-11-04 08:00 (-23d) | 2009-11-27 17:00 → 2009-11-04 12:00 (-23d) |  |  | 38d → 208.5d |  |  |
| 105 | Test Procedures to test BRM | 2009-11-30 08:00 → 2009-11-04 13:00 (-26d) | 2009-11-30 12:00 → 2009-11-04 17:00 (-26d) |  |  | 38d → 208.5d |  |  |
| 106 | Documentation validation testing | 2009-11-30 13:00 → 2009-11-05 08:00 (-25d) | 2009-11-30 17:00 → 2009-11-05 12:00 (-25d) |  |  | 38d → 208.5d |  |  |
| 107 | **Composer Structure** | 2009-12-01 08:00 → 2009-11-05 13:00 (-26d) | 2009-12-02 17:00 → 2009-11-09 12:00 (-23d) |  |  | 38d → 208.5d |  |  |
| 108 | Library Functions (common) | 2009-12-01 08:00 → 2009-11-05 13:00 (-26d) | 2009-12-01 12:00 → 2009-11-05 17:00 (-26d) |  |  | 38d → 208.5d |  |  |
| 109 | Library Functions (unique) | 2009-12-01 13:00 → 2009-11-06 08:00 (-25d) | 2009-12-01 17:00 → 2009-11-06 12:00 (-25d) |  |  | 38d → 208.5d |  |  |
| 110 | Template defintion with detailed documentation | 2009-12-02 08:00 → 2009-11-06 13:00 (-26d) | 2009-12-02 12:00 → 2009-11-06 17:00 (-26d) |  |  | 38d → 208.5d |  |  |
| 111 | Business Rules for Composer Level | 2009-12-02 13:00 → 2009-11-09 08:00 (-23d) | 2009-12-02 17:00 → 2009-11-09 12:00 (-23d) |  |  | 38d → 208.5d |  |  |
| 112 | **Composer Builder** | 2009-12-03 08:00 → 2009-11-09 13:00 (-24d) | 2009-12-04 17:00 → 2009-11-11 12:00 (-23d) |  |  | 38d → 208.5d |  |  |
| 113 | Library Functions (common) | 2009-12-03 08:00 → 2009-11-09 13:00 (-24d) | 2009-12-03 12:00 → 2009-11-09 17:00 (-24d) |  |  | 38d → 208.5d |  |  |
| 114 | Library Functions (unique) | 2009-12-03 13:00 → 2009-11-10 08:00 (-23d) | 2009-12-03 17:00 → 2009-11-10 12:00 (-23d) |  |  | 38d → 208.5d |  |  |
| 115 | Template defintion with detailed documentation | 2009-12-04 08:00 → 2009-11-10 13:00 (-24d) | 2009-12-04 12:00 → 2009-11-10 17:00 (-24d) |  |  | 38d → 208.5d |  |  |
| 116 | Business Rules for Composer Builder | 2009-12-04 13:00 → 2009-11-11 08:00 (-23d) | 2009-12-04 17:00 → 2009-11-11 12:00 (-23d) |  |  | 38d → 208.5d |  |  |
| 117 | **Test Defintion** | 2009-12-07 08:00 → 2009-11-02 08:00 (-35d) | 2010-02-17 12:00 → 2009-12-25 12:00 (-54d) | 52.5d → 39.5d |  | 38d → 131d |  |  |
| 118 | **Library Module Tests** | 2009-12-07 08:00 → 2009-11-11 13:00 (-26d) | 2009-12-09 12:00 → 2009-11-13 17:00 (-26d) |  |  | 38d → 208.5d |  |  |
| 119 | Define test requirements for each function | 2009-12-07 08:00 → 2009-11-11 13:00 (-26d) | 2009-12-07 12:00 → 2009-11-11 17:00 (-26d) |  |  | 38d → 208.5d |  |  |
| 120 | Define in / out bound test | 2009-12-07 13:00 → 2009-11-12 08:00 (-25d) | 2009-12-07 17:00 → 2009-11-12 12:00 (-25d) |  |  | 38d → 208.5d |  |  |
| 121 | Define exception test | 2009-12-08 08:00 → 2009-11-12 13:00 (-26d) | 2009-12-08 12:00 → 2009-11-12 17:00 (-26d) |  |  | 38d → 208.5d |  |  |
| 122 | Define Null test | 2009-12-08 13:00 → 2009-11-13 08:00 (-25d) | 2009-12-08 17:00 → 2009-11-13 12:00 (-25d) |  |  | 38d → 208.5d |  |  |
| 123 | Define Query test | 2009-12-09 08:00 → 2009-11-13 13:00 (-26d) | 2009-12-09 12:00 → 2009-11-13 17:00 (-26d) |  |  | 38d → 208.5d |  |  |
| 124 | **Control Table Tests** | 2009-12-09 13:00 → 2009-11-16 08:00 (-23d) | 2009-12-11 17:00 → 2009-11-18 12:00 (-23d) |  |  | 38d → 208.5d |  |  |
| 125 | Define test requirements for each table | 2009-12-09 13:00 → 2009-11-16 08:00 (-23d) | 2009-12-09 17:00 → 2009-11-16 12:00 (-23d) |  |  | 38d → 208.5d |  |  |
| 126 | Define in / out bound test | 2009-12-10 08:00 → 2009-11-16 13:00 (-24d) | 2009-12-10 12:00 → 2009-11-16 17:00 (-24d) |  |  | 38d → 208.5d |  |  |
| 127 | Define exception test | 2009-12-10 13:00 → 2009-11-17 08:00 (-23d) | 2009-12-10 17:00 → 2009-11-17 12:00 (-23d) |  |  | 38d → 208.5d |  |  |
| 128 | Define Null test | 2009-12-11 08:00 → 2009-11-17 13:00 (-24d) | 2009-12-11 12:00 → 2009-11-17 17:00 (-24d) |  |  | 38d → 208.5d |  |  |
| 129 | Define Query test | 2009-12-11 13:00 → 2009-11-18 08:00 (-23d) | 2009-12-11 17:00 → 2009-11-18 12:00 (-23d) |  |  | 38d → 208.5d |  |  |
| 130 | **Business Rule Manager Test** | 2009-12-14 08:00 → 2009-11-18 13:00 (-26d) | 2009-12-17 17:00 → 2009-11-24 12:00 (-23d) |  |  | 38d → 208.5d |  |  |
| 131 | Define test requirements for each function | 2009-12-14 08:00 → 2009-11-18 13:00 (-26d) | 2009-12-14 12:00 → 2009-11-18 17:00 (-26d) |  |  | 38d → 208.5d |  |  |
| 132 | Define in / out bound test | 2009-12-14 13:00 → 2009-11-19 08:00 (-25d) | 2009-12-14 17:00 → 2009-11-19 12:00 (-25d) |  |  | 38d → 208.5d |  |  |
| 133 | Define exception test | 2009-12-15 08:00 → 2009-11-19 13:00 (-26d) | 2009-12-15 12:00 → 2009-11-19 17:00 (-26d) |  |  | 38d → 208.5d |  |  |
| 134 | Define Null test | 2009-12-15 13:00 → 2009-11-20 08:00 (-25d) | 2009-12-15 17:00 → 2009-11-20 12:00 (-25d) |  |  | 38d → 208.5d |  |  |
| 135 | Define Query test | 2009-12-16 08:00 → 2009-11-20 13:00 (-26d) | 2009-12-16 12:00 → 2009-11-20 17:00 (-26d) |  |  | 38d → 208.5d |  |  |
| 136 | Define test for control on each field on GUID | 2009-12-16 13:00 → 2009-11-23 08:00 (-23d) | 2009-12-16 17:00 → 2009-11-23 12:00 (-23d) |  |  | 38d → 208.5d |  |  |
| 137 | Define test for in and out of range for each field | 2009-12-17 08:00 → 2009-11-23 13:00 (-24d) | 2009-12-17 12:00 → 2009-11-23 17:00 (-24d) |  |  | 38d → 208.5d |  |  |
| 138 | Define test for each control button on form | 2009-12-17 13:00 → 2009-11-24 08:00 (-23d) | 2009-12-17 17:00 → 2009-11-24 12:00 (-23d) |  |  | 38d → 208.5d |  |  |
| 139 | **Warehouse Manager Test** | 2009-12-18 08:00 → 2009-11-24 13:00 (-24d) | 2009-12-23 17:00 → 2009-11-30 12:00 (-23d) |  |  | 38d → 208.5d |  |  |
| 140 | Define test requirements for each function or procedure in package | 2009-12-18 08:00 → 2009-11-24 13:00 (-24d) | 2009-12-18 12:00 → 2009-11-24 17:00 (-24d) |  |  | 38d → 208.5d |  |  |
| 141 | Define in / out bound test | 2009-12-18 13:00 → 2009-11-25 08:00 (-23d) | 2009-12-18 17:00 → 2009-11-25 12:00 (-23d) |  |  | 38d → 208.5d |  |  |
| 142 | Define exception test | 2009-12-21 08:00 → 2009-11-25 13:00 (-26d) | 2009-12-21 12:00 → 2009-11-25 17:00 (-26d) |  |  | 38d → 208.5d |  |  |
| 143 | Define Null test | 2009-12-21 13:00 → 2009-11-26 08:00 (-25d) | 2009-12-21 17:00 → 2009-11-26 12:00 (-25d) |  |  | 38d → 208.5d |  |  |

| ID | Task | Start | Finish | Duration | Total float | Predecessors |
| --- | --- | --- | --- | --- | --- | --- |
| 144 | Define Query test | 2009-12-22 08:00 → 2009-11-26 13:00 (-26d) | 2009-12-22 12:00 → 2009-11-26 17:00 (-26d) |  | 38d → 208.5d |  |
| 145 | Define test for each interaction between functions and procedures in package | 2009-12-22 13:00 → 2009-11-27 08:00 (-25d) | 2009-12-22 17:00 → 2009-11-27 12:00 (-25d) |  | 38d → 208.5d |  |
| 146 | Define test for each cursor or query to database | 2009-12-23 08:00 → 2009-11-27 13:00 (-26d) | 2009-12-23 12:00 → 2009-11-27 17:00 (-26d) |  | 38d → 208.5d |  |
| 147 | Define test for each exception defined in package | 2009-12-23 13:00 → 2009-11-30 08:00 (-23d) | 2009-12-23 17:00 → 2009-11-30 12:00 (-23d) |  | 38d → 208.5d |  |
| 148 | **Composer Test** | 2009-12-24 08:00 → 2009-11-30 13:00 (-24d) | 2009-12-30 17:00 → 2009-12-07 12:00 (-23d) |  | 38d → 208.5d |  |
| 149 | Define test requirements for each function | 2009-12-24 08:00 → 2009-11-30 13:00 (-24d) | 2009-12-24 12:00 → 2009-11-30 17:00 (-24d) |  | 38d → 208.5d |  |
| 150 | Define in / out bound test | 2009-12-24 13:00 → 2009-12-01 08:00 (-23d) | 2009-12-24 17:00 → 2009-12-01 12:00 (-23d) |  | 38d → 208.5d |  |
| 151 | Define exception test | 2009-12-25 08:00 → 2009-12-01 13:00 (-24d) | 2009-12-25 12:00 → 2009-12-01 17:00 (-24d) |  | 38d → 208.5d |  |
| 152 | Define Null test | 2009-12-25 13:00 → 2009-12-02 08:00 (-23d) | 2009-12-25 17:00 → 2009-12-02 12:00 (-23d) |  | 38d → 208.5d |  |
| 153 | Define Query test | 2009-12-28 08:00 → 2009-12-02 13:00 (-26d) | 2009-12-28 12:00 → 2009-12-02 17:00 (-26d) |  | 38d → 208.5d |  |
| 154 | Define create and compile tests for exception handling | 2009-12-28 13:00 → 2009-12-03 08:00 (-25d) | 2009-12-28 17:00 → 2009-12-03 12:00 (-25d) |  | 38d → 208.5d |  |
| 155 | Define tests for each exception and control | 2009-12-29 08:00 → 2009-12-03 13:00 (-26d) | 2009-12-29 12:00 → 2009-12-03 17:00 (-26d) |  | 38d → 208.5d |  |
| 156 | Define tests for execution of composer and execpted function | 2009-12-29 13:00 → 2009-12-04 08:00 (-25d) | 2009-12-29 17:00 → 2009-12-04 12:00 (-25d) |  | 38d → 208.5d |  |
| 157 | Define test for Perl Strict control | 2009-12-30 08:00 → 2009-12-04 13:00 (-26d) | 2009-12-30 12:00 → 2009-12-04 17:00 (-26d) |  | 38d → 208.5d |  |
| 158 | Define test for missing libraries | 2009-12-30 13:00 → 2009-12-07 08:00 (-23d) | 2009-12-30 17:00 → 2009-12-07 12:00 (-23d) |  | 38d → 208.5d |  |
| 159 | **Components Tests** | 2009-12-31 08:00 → 2009-12-07 13:00 (-24d) | 2010-02-05 12:00 → 2009-12-25 12:00 (-42d) | 26.5d → 14d | 38d → 208.5d |  |
| 160 | **For each component test timer control** | 2009-12-31 08:00 → 2009-12-07 13:00 (-24d) | 2010-01-05 12:00 → 2009-12-09 12:00 (-27d) | 3.5d → 2d | 38d → 208.5d |  |
| 161 | Forklift (FL) | 2009-12-31 08:00 → 2009-12-07 13:00 (-24d) | 2009-12-31 12:00 → 2009-12-07 17:00 (-24d) |  | 38d → 208.5d |  |
| 162 | Sorter (SO) | 2009-12-31 13:00 → 2009-12-08 08:00 (-23d) | 2009-12-31 17:00 → 2009-12-08 12:00 (-23d) |  | 38d → 208.5d |  |
| 163 | Cataloger (CT) | 2010-01-01 08:00 → 2009-12-08 13:00 (-24d) | 2010-01-01 12:00 → 2009-12-08 17:00 (-24d) |  | 38d → 208.5d |  |
| 164 | Stocker (ST) | 2010-01-01 13:00 → 2009-12-09 08:00 (-23d) | 2010-01-01 17:00 → 2009-12-09 12:00 (-23d) |  | 38d → 208.5d |  |
| 165 | **For each component test each move file** | 2010-01-05 13:00 → 2009-12-09 13:00 (-27d) | 2010-01-08 17:00 → 2009-12-11 12:00 (-28d) | 3.5d → 2d | 38d → 208.5d |  |
| 166 | Forklift (FL) | 2010-01-05 13:00 → 2009-12-09 13:00 (-27d) | 2010-01-05 17:00 → 2009-12-09 17:00 (-27d) |  | 38d → 208.5d | Sender (SD) → 164 |
| 167 | Sorter (SO) | 2010-01-06 08:00 → 2009-12-10 08:00 (-27d) | 2010-01-06 12:00 → 2009-12-10 12:00 (-27d) |  | 38d → 208.5d |  |
| 168 | Cataloger (CT) | 2010-01-06 13:00 → 2009-12-10 13:00 (-27d) | 2010-01-06 17:00 → 2009-12-10 17:00 (-27d) |  | 38d → 208.5d |  |
| 169 | Stocker (ST) | 2010-01-07 08:00 → 2009-12-11 08:00 (-27d) | 2010-01-07 12:00 → 2009-12-11 12:00 (-27d) |  | 38d → 208.5d |  |
| 170 | **For each component test each library call** | 2010-01-11 08:00 → 2009-12-11 13:00 (-31d) | 2010-01-14 12:00 → 2009-12-15 12:00 (-30d) | 3.5d → 2d | 38d → 208.5d |  |
| 171 | Forklift (FL) | 2010-01-11 08:00 → 2009-12-11 13:00 (-31d) | 2010-01-11 12:00 → 2009-12-11 17:00 (-31d) |  | 38d → 208.5d | Sender (SD) → 169 |
| 172 | Sorter (SO) | 2010-01-11 13:00 → 2009-12-14 08:00 (-28d) | 2010-01-11 17:00 → 2009-12-14 12:00 (-28d) |  | 38d → 208.5d |  |
| 173 | Cataloger (CT) | 2010-01-12 08:00 → 2009-12-14 13:00 (-29d) | 2010-01-12 12:00 → 2009-12-14 17:00 (-29d) |  | 38d → 208.5d |  |
| 174 | Stocker (ST) | 2010-01-12 13:00 → 2009-12-15 08:00 (-28d) | 2010-01-12 17:00 → 2009-12-15 12:00 (-28d) |  | 38d → 208.5d |  |
| 175 | **For each component test each database call** | 2010-01-14 13:00 → 2009-12-15 13:00 (-30d) | 2010-01-19 17:00 → 2009-12-17 12:00 (-33d) | 3.5d → 2d | 38d → 208.5d |  |
| 176 | Forklift (FL) | 2010-01-14 13:00 → 2009-12-15 13:00 (-30d) | 2010-01-14 17:00 → 2009-12-15 17:00 (-30d) |  | 38d → 208.5d | Sender (SD) → 174 |
| 177 | Sorter (SO) | 2010-01-15 08:00 → 2009-12-16 08:00 (-30d) | 2010-01-15 12:00 → 2009-12-16 12:00 (-30d) |  | 38d → 208.5d |  |
| 178 | Cataloger (CT) | 2010-01-15 13:00 → 2009-12-16 13:00 (-30d) | 2010-01-15 17:00 → 2009-12-16 17:00 (-30d) |  | 38d → 208.5d |  |
| 179 | Stocker (ST) | 2010-01-18 08:00 → 2009-12-17 08:00 (-32d) | 2010-01-18 12:00 → 2009-12-17 12:00 (-32d) |  | 38d → 208.5d |  |
| 180 | **For each component test each execute/system call** | 2010-01-20 08:00 → 2009-12-17 13:00 (-34d) | 2010-01-25 12:00 → 2009-12-21 12:00 (-35d) | 3.5d → 2d | 38d → 208.5d |  |
| 181 | Forklift (FL) | 2010-01-20 08:00 → 2009-12-17 13:00 (-34d) | 2010-01-20 12:00 → 2009-12-17 17:00 (-34d) |  | 38d → 208.5d | Sender (SD) → 179 |
| 182 | Sorter (SO) | 2010-01-20 13:00 → 2009-12-18 08:00 (-33d) | 2010-01-20 17:00 → 2009-12-18 12:00 (-33d) |  | 38d → 208.5d |  |
| 183 | Cataloger (CT) | 2010-01-21 08:00 → 2009-12-18 13:00 (-34d) | 2010-01-21 12:00 → 2009-12-18 17:00 (-34d) |  | 38d → 208.5d |  |
| 184 | Stocker (ST) | 2010-01-21 13:00 → 2009-12-21 08:00 (-31d) | 2010-01-21 17:00 → 2009-12-21 12:00 (-31d) |  | 38d → 208.5d |  |
| 185 | **For each component test compliation on creation** | 2010-01-25 13:00 → 2009-12-21 13:00 (-35d) | 2010-01-28 17:00 → 2009-12-23 12:00 (-36d) | 3.5d → 2d | 38d → 208.5d |  |
| 186 | Forklift (FL) | 2010-01-25 13:00 → 2009-12-21 13:00 (-35d) | 2010-01-25 17:00 → 2009-12-21 17:00 (-35d) |  | 38d → 208.5d | Sender (SD) → 184 |
| 187 | Sorter (SO) | 2010-01-26 08:00 → 2009-12-22 08:00 (-35d) | 2010-01-26 12:00 → 2009-12-22 12:00 (-35d) |  | 38d → 208.5d |  |
| 188 | Cataloger (CT) | 2010-01-26 13:00 → 2009-12-22 13:00 (-35d) | 2010-01-26 17:00 → 2009-12-22 17:00 (-35d) |  | 38d → 208.5d |  |
| 189 | Stocker (ST) | 2010-01-27 08:00 → 2009-12-23 08:00 (-35d) | 2010-01-27 12:00 → 2009-12-23 12:00 (-35d) |  | 38d → 208.5d |  |
| 190 | **For each component test file/directory permissions** | 2010-01-29 08:00 → 2009-12-23 13:00 (-37d) | 2010-02-05 12:00 → 2009-12-25 12:00 (-42d) | 5.5d → 2d | 38d → 208.5d |  |
| 191 | Forklift (FL) | 2010-01-29 08:00 → 2009-12-23 13:00 (-37d) | 2010-01-29 12:00 → 2009-12-23 17:00 (-37d) |  | 38d → 208.5d | Sender (SD) → 189 |
| 192 | Sorter (SO) | 2010-01-29 13:00 → 2009-12-24 08:00 (-36d) | 2010-01-29 17:00 → 2009-12-24 12:00 (-36d) |  | 38d → 208.5d |  |
| 193 | Cataloger (CT) | 2010-02-01 08:00 → 2009-12-24 13:00 (-39d) | 2010-02-01 12:00 → 2009-12-24 17:00 (-39d) |  | 38d → 208.5d |  |
| 194 | Stocker (ST) | 2010-02-01 13:00 → 2009-12-25 08:00 (-38d) | 2010-02-01 17:00 → 2009-12-25 12:00 (-38d) |  | 38d → 208.5d |  |
| 195 | **Integration Tests** | 2010-02-05 13:00 → 2009-11-02 08:00 (-95d) | 2010-02-17 12:00 → 2009-11-05 12:00 (-104d) | 8d → 3.5d | 38d → 131d |  |
| 196 | FL - SO | 2010-02-05 13:00 → 2009-11-02 08:00 (-95d) | 2010-02-05 17:00 → 2009-11-02 12:00 (-95d) |  | 38d → 131d | TBD Tests → none |
| 197 | FL - WM | 2010-02-08 08:00 → 2009-11-02 13:00 (-98d) | 2010-02-08 12:00 → 2009-11-02 17:00 (-98d) |  | 38d → 131d |  |
| 198 | SO - CT | 2010-02-08 13:00 → 2009-11-03 08:00 (-97d) | 2010-02-08 17:00 → 2009-11-03 12:00 (-97d) |  | 38d → 131d |  |
| 199 | SO - WM | 2010-02-09 08:00 → 2009-11-03 13:00 (-98d) | 2010-02-09 12:00 → 2009-11-03 17:00 (-98d) |  | 38d → 131d |  |
| 200 | CT - ST | 2010-02-09 13:00 → 2009-11-04 08:00 (-97d) | 2010-02-09 17:00 → 2009-11-04 12:00 (-97d) |  | 38d → 131d |  |
| 201 | CT - WM | 2010-02-10 08:00 → 2009-11-04 13:00 (-98d) | 2010-02-10 12:00 → 2009-11-04 17:00 (-98d) |  | 38d → 131d |  |
| 202 | ST - WM | 2010-02-10 13:00 → 2009-11-05 08:00 (-97d) | 2010-02-10 17:00 → 2009-11-05 12:00 (-97d) |  | 38d → 131d |  |
| 203 | **Deployment Plan** | 2010-02-17 13:00 → 2009-11-05 13:00 (-104d) | 2010-03-04 12:00 → 2009-11-20 12:00 (-104d) |  | 38d → 131d |  |
| 204 | **Database Table and Metadata Deployment** | 2010-02-17 13:00 → 2009-11-05 13:00 (-104d) | 2010-02-24 12:00 → 2009-11-12 12:00 (-104d) |  | 38d → 131d |  |
| 205 | LOGSA Deployment Structure Setup | 2010-02-17 13:00 → 2009-11-05 13:00 (-104d) | 2010-02-17 17:00 → 2009-11-05 17:00 (-104d) |  | 38d → 131d | TBD Tests → 202 |
| 206 | Scripts for Tables | 2010-02-18 08:00 → 2009-11-06 08:00 (-104d) | 2010-02-18 12:00 → 2009-11-06 12:00 (-104d) |  | 38d → 131d |  |
| 207 | Scripts for Packages | 2010-02-18 13:00 → 2009-11-06 13:00 (-104d) | 2010-02-18 17:00 → 2009-11-06 17:00 (-104d) |  | 38d → 131d |  |
| 208 | Scripts for Contraints | 2010-02-19 08:00 → 2009-11-09 08:00 (-102d) | 2010-02-19 12:00 → 2009-11-09 12:00 (-102d) |  | 38d → 131d |  |
| 209 | Scripts for Indexes | 2010-02-19 13:00 → 2009-11-09 13:00 (-102d) | 2010-02-19 17:00 → 2009-11-09 17:00 (-102d) |  | 38d → 131d |  |
| 210 | Scripts for views | 2010-02-22 08:00 → 2009-11-10 08:00 (-104d) | 2010-02-22 12:00 → 2009-11-10 12:00 (-104d) |  | 38d → 131d |  |
| 211 | Scripts for sequences | 2010-02-22 13:00 → 2009-11-10 13:00 (-104d) | 2010-02-22 17:00 → 2009-11-10 17:00 (-104d) |  | 38d → 131d |  |
| 212 | Scripts for synonyms | 2010-02-23 08:00 → 2009-11-11 08:00 (-104d) | 2010-02-23 12:00 → 2009-11-11 12:00 (-104d) |  | 38d → 131d |  |
| 213 | Scripts for data from each table | 2010-02-23 13:00 → 2009-11-11 13:00 (-104d) | 2010-02-23 17:00 → 2009-11-11 17:00 (-104d) |  | 38d → 131d |  |

| ID | Task | Start | Finish | Duration | Total float |
| --- | --- | --- | --- | --- | --- |
| 214 | TBD Scripts | 2010-02-24 08:00 → 2009-11-12 08:00 (-104d) | 2010-02-24 12:00 → 2009-11-12 12:00 (-104d) |  | 38d → 131d |
| 215 | **Application Deployment** | 2010-02-24 13:00 → 2009-11-12 13:00 (-104d) | 2010-03-01 17:00 → 2009-11-17 17:00 (-104d) |  | 38d → 131d |
| 216 | Module Packaging | 2010-02-24 13:00 → 2009-11-12 13:00 (-104d) | 2010-02-24 17:00 → 2009-11-12 17:00 (-104d) |  | 38d → 131d |
| 217 | Metadata Packaging | 2010-02-25 08:00 → 2009-11-13 08:00 (-104d) | 2010-02-25 12:00 → 2009-11-13 12:00 (-104d) |  | 38d → 131d |
| 218 | Team Track Definition | 2010-02-25 13:00 → 2009-11-13 13:00 (-104d) | 2010-02-25 17:00 → 2009-11-13 17:00 (-104d) |  | 38d → 131d |
| 219 | Module VM Check in | 2010-02-26 08:00 → 2009-11-16 08:00 (-102d) | 2010-02-26 12:00 → 2009-11-16 12:00 (-102d) |  | 38d → 131d |
| 220 | Metadata Packaging VM Check in | 2010-02-26 13:00 → 2009-11-16 13:00 (-102d) | 2010-02-26 17:00 → 2009-11-16 17:00 (-102d) |  | 38d → 131d |
| 221 | Deployment Test Suite VM Check in | 2010-03-01 08:00 → 2009-11-17 08:00 (-104d) | 2010-03-01 12:00 → 2009-11-17 12:00 (-104d) |  | 38d → 131d |
| 222 | Documentation VM Check in | 2010-03-01 13:00 → 2009-11-17 13:00 (-104d) | 2010-03-01 17:00 → 2009-11-17 17:00 (-104d) |  | 38d → 131d |
| 223 | **In Place Deployment Test Suite** | 2010-03-02 08:00 → 2009-11-18 08:00 (-104d) | 2010-03-04 12:00 → 2009-11-20 12:00 (-104d) |  | 38d → 131d |
| 224 | Determine In Place Deployment Tests needed | 2010-03-02 08:00 → 2009-11-18 08:00 (-104d) | 2010-03-02 12:00 → 2009-11-18 12:00 (-104d) |  | 38d → 131d |
| 225 | Package Tests | 2010-03-02 13:00 → 2009-11-18 13:00 (-104d) | 2010-03-02 17:00 → 2009-11-18 17:00 (-104d) |  | 38d → 131d |
| 226 | Test the package of test | 2010-03-03 08:00 → 2009-11-19 08:00 (-104d) | 2010-03-03 12:00 → 2009-11-19 12:00 (-104d) |  | 38d → 131d |
| 227 | Document the steps to run the test | 2010-03-03 13:00 → 2009-11-19 13:00 (-104d) | 2010-03-03 17:00 → 2009-11-19 17:00 (-104d) |  | 38d → 131d |
| 228 | Create the Deployment Test Suite | 2010-03-04 08:00 → 2009-11-20 08:00 (-104d) | 2010-03-04 12:00 → 2009-11-20 12:00 (-104d) |  | 38d → 131d |
| 229 | **Technical Signoff** | 2010-03-04 13:00 → 2009-11-20 13:00 (-104d) | 2010-03-05 12:00 → 2009-11-23 12:00 (-102d) |  | 38d → 131d |
| 230 | Team | 2010-03-04 13:00 → 2009-11-20 13:00 (-104d) | 2010-03-04 17:00 → 2009-11-20 17:00 (-104d) |  | 38d → 131d |
| 231 | Management | 2010-03-05 08:00 → 2009-11-23 08:00 (-102d) | 2010-03-05 12:00 → 2009-11-23 12:00 (-102d) |  | 38d → 131d |
| 232 | **Development Cycle** | 2010-03-05 13:00 → 2009-11-23 13:00 (-102d) | 2010-08-06 17:00 → 2010-03-30 17:00 (-129d) | 110.5d → 91.5d | 38d → 131d |
| 233 | **Documentation** | 2010-03-05 13:00 → 2009-11-23 13:00 (-102d) | 2010-03-25 17:00 → 2009-12-11 17:00 (-104d) |  | 38d → 131d |
| 234 | **System Documentation** | 2010-03-05 13:00 → 2009-11-23 13:00 (-102d) | 2010-03-10 17:00 → 2009-11-26 17:00 (-104d) |  | 38d → 131d |
| 235 | Concept | 2010-03-05 13:00 → 2009-11-23 13:00 (-102d) | 2010-03-05 17:00 → 2009-11-23 17:00 (-102d) |  | 38d → 131d |
| 236 | Design Overview | 2010-03-08 08:00 → 2009-11-24 08:00 (-104d) | 2010-03-08 12:00 → 2009-11-24 12:00 (-104d) |  | 38d → 131d |
| 237 | Product Use | 2010-03-08 13:00 → 2009-11-24 13:00 (-104d) | 2010-03-08 17:00 → 2009-11-24 17:00 (-104d) |  | 38d → 131d |
| 238 | Control and Processing | 2010-03-09 08:00 → 2009-11-25 08:00 (-104d) | 2010-03-09 12:00 → 2009-11-25 12:00 (-104d) |  | 38d → 131d |
| 239 | Maintenance and Philosophy | 2010-03-09 13:00 → 2009-11-25 13:00 (-104d) | 2010-03-09 17:00 → 2009-11-25 17:00 (-104d) |  | 38d → 131d |
| 240 | Components and Definitions | 2010-03-10 08:00 → 2009-11-26 08:00 (-104d) | 2010-03-10 12:00 → 2009-11-26 12:00 (-104d) |  | 38d → 131d |
| 241 | Reference Appendixes | 2010-03-10 13:00 → 2009-11-26 13:00 (-104d) | 2010-03-10 17:00 → 2009-11-26 17:00 (-104d) |  | 38d → 131d |
| 242 | **User Documentation** | 2010-03-11 08:00 → 2009-11-27 08:00 (-104d) | 2010-03-16 12:00 → 2009-12-02 12:00 (-104d) |  | 38d → 131d |
| 243 | Concept | 2010-03-11 08:00 → 2009-11-27 08:00 (-104d) | 2010-03-11 12:00 → 2009-11-27 12:00 (-104d) |  | 38d → 131d |
| 244 | Design Overview | 2010-03-11 13:00 → 2009-11-27 13:00 (-104d) | 2010-03-11 17:00 → 2009-11-27 17:00 (-104d) |  | 38d → 131d |
| 245 | Product Use | 2010-03-12 08:00 → 2009-11-30 08:00 (-102d) | 2010-03-12 12:00 → 2009-11-30 12:00 (-102d) |  | 38d → 131d |
| 246 | Control and Processing | 2010-03-12 13:00 → 2009-11-30 13:00 (-102d) | 2010-03-12 17:00 → 2009-11-30 17:00 (-102d) |  | 38d → 131d |
| 247 | Maintenance and Philosophy | 2010-03-15 08:00 → 2009-12-01 08:00 (-104d) | 2010-03-15 12:00 → 2009-12-01 12:00 (-104d) |  | 38d → 131d |
| 248 | Components and Definitions | 2010-03-15 13:00 → 2009-12-01 13:00 (-104d) | 2010-03-15 17:00 → 2009-12-01 17:00 (-104d) |  | 38d → 131d |
| 249 | Reference Appendixes | 2010-03-16 08:00 → 2009-12-02 08:00 (-104d) | 2010-03-16 12:00 → 2009-12-02 12:00 (-104d) |  | 38d → 131d |
| 250 | **Test Documentation** | 2010-03-16 13:00 → 2009-12-02 13:00 (-104d) | 2010-03-18 17:00 → 2009-12-04 17:00 (-104d) |  | 38d → 131d |
| 251 | Concept | 2010-03-16 13:00 → 2009-12-02 13:00 (-104d) | 2010-03-16 17:00 → 2009-12-02 17:00 (-104d) |  | 38d → 131d |
| 252 | Functional Description | 2010-03-17 08:00 → 2009-12-03 08:00 (-104d) | 2010-03-17 12:00 → 2009-12-03 12:00 (-104d) |  | 38d → 131d |
| 253 | Design | 2010-03-17 13:00 → 2009-12-03 13:00 (-104d) | 2010-03-17 17:00 → 2009-12-03 17:00 (-104d) |  | 38d → 131d |
| 254 | Structures and defintion | 2010-03-18 08:00 → 2009-12-04 08:00 (-104d) | 2010-03-18 12:00 → 2009-12-04 12:00 (-104d) |  | 38d → 131d |
| 255 | Reference Appendixes | 2010-03-18 13:00 → 2009-12-04 13:00 (-104d) | 2010-03-18 17:00 → 2009-12-04 17:00 (-104d) |  | 38d → 131d |
| 256 | **Template Documentation** | 2010-03-19 08:00 → 2009-12-07 08:00 (-102d) | 2010-03-23 12:00 → 2009-12-09 12:00 (-104d) |  | 38d → 131d |
| 257 | Concept | 2010-03-19 08:00 → 2009-12-07 08:00 (-102d) | 2010-03-19 12:00 → 2009-12-07 12:00 (-102d) |  | 38d → 131d |
| 258 | Functional Description | 2010-03-19 13:00 → 2009-12-07 13:00 (-102d) | 2010-03-19 17:00 → 2009-12-07 17:00 (-102d) |  | 38d → 131d |
| 259 | Design | 2010-03-22 08:00 → 2009-12-08 08:00 (-104d) | 2010-03-22 12:00 → 2009-12-08 12:00 (-104d) |  | 38d → 131d |
| 260 | Structures and defintion | 2010-03-22 13:00 → 2009-12-08 13:00 (-104d) | 2010-03-22 17:00 → 2009-12-08 17:00 (-104d) |  | 38d → 131d |
| 261 | Reference Appendixes | 2010-03-23 08:00 → 2009-12-09 08:00 (-104d) | 2010-03-23 12:00 → 2009-12-09 12:00 (-104d) |  | 38d → 131d |
| 262 | **Warehouse Manager Documentation** | 2010-03-23 13:00 → 2009-12-09 13:00 (-104d) | 2010-03-25 17:00 → 2009-12-11 17:00 (-104d) |  | 38d → 131d |
| 263 | Concept | 2010-03-23 13:00 → 2009-12-09 13:00 (-104d) | 2010-03-23 17:00 → 2009-12-09 17:00 (-104d) |  | 38d → 131d |
| 264 | Functional Description | 2010-03-24 08:00 → 2009-12-10 08:00 (-104d) | 2010-03-24 12:00 → 2009-12-10 12:00 (-104d) |  | 38d → 131d |
| 265 | Design | 2010-03-24 13:00 → 2009-12-10 13:00 (-104d) | 2010-03-24 17:00 → 2009-12-10 17:00 (-104d) |  | 38d → 131d |
| 266 | Calls and Access | 2010-03-25 08:00 → 2009-12-11 08:00 (-104d) | 2010-03-25 12:00 → 2009-12-11 12:00 (-104d) |  | 38d → 131d |
| 267 | Reference Appendixes | 2010-03-25 13:00 → 2009-12-11 13:00 (-104d) | 2010-03-25 17:00 → 2009-12-11 17:00 (-104d) |  | 38d → 131d |
| 268 | **Test Development** | 2010-03-26 08:00 → 2009-12-14 08:00 (-102d) | 2010-04-14 17:00 → 2009-12-31 17:00 (-104d) |  | 38d → 131d |
| 269 | **Library Module Tests** | 2010-03-26 08:00 → 2009-12-14 08:00 (-102d) | 2010-04-01 17:00 → 2009-12-18 17:00 (-104d) |  | 38d → 131d |
| 270 | Database.pm | 2010-03-26 08:00 → 2009-12-14 08:00 (-102d) | 2010-03-26 12:00 → 2009-12-14 12:00 (-102d) |  | 38d → 131d |
| 271 | Storage.pm | 2010-03-26 13:00 → 2009-12-14 13:00 (-102d) | 2010-03-26 17:00 → 2009-12-14 17:00 (-102d) |  | 38d → 131d |
| 272 | Dataset.pm | 2010-03-29 08:00 → 2009-12-15 08:00 (-104d) | 2010-03-29 12:00 → 2009-12-15 12:00 (-104d) |  | 38d → 131d |
| 273 | Plog.pm | 2010-03-29 13:00 → 2009-12-15 13:00 (-104d) | 2010-03-29 17:00 → 2009-12-15 17:00 (-104d) |  | 38d → 131d |
| 274 | CFD.pm | 2010-03-30 08:00 → 2009-12-16 08:00 (-104d) | 2010-03-30 12:00 → 2009-12-16 12:00 (-104d) |  | 38d → 131d |
| 275 | ComBld.pm | 2010-03-30 13:00 → 2009-12-16 13:00 (-104d) | 2010-03-30 17:00 → 2009-12-16 17:00 (-104d) |  | 38d → 131d |
| 276 | Composer.pm | 2010-03-31 08:00 → 2009-12-17 08:00 (-104d) | 2010-03-31 12:00 → 2009-12-17 12:00 (-104d) |  | 38d → 131d |
| 277 | Sending.pm | 2010-03-31 13:00 → 2009-12-17 13:00 (-104d) | 2010-03-31 17:00 → 2009-12-17 17:00 (-104d) |  | 38d → 131d |
| 278 | Mail.pm | 2010-04-01 08:00 → 2009-12-18 08:00 (-104d) | 2010-04-01 12:00 → 2009-12-18 12:00 (-104d) |  | 38d → 131d |
| 279 | TBD | 2010-04-01 13:00 → 2009-12-18 13:00 (-104d) | 2010-04-01 17:00 → 2009-12-18 17:00 (-104d) |  | 38d → 131d |
| 280 | Control Table Tests | 2010-04-02 08:00 → 2009-12-21 08:00 (-102d) | 2010-04-02 12:00 → 2009-12-21 12:00 (-102d) |  | 38d → 131d |
| 281 | **Business Rule Manager Test** | 2010-04-02 13:00 → 2009-12-21 13:00 (-102d) | 2010-04-08 12:00 → 2009-12-25 12:00 (-104d) |  | 38d → 131d |
| 282 | GUID | 2010-04-02 13:00 → 2009-12-21 13:00 (-102d) | 2010-04-02 17:00 → 2009-12-21 17:00 (-102d) |  | 38d → 131d |
| 283 | Database Calls | 2010-04-05 08:00 → 2009-12-22 08:00 (-104d) | 2010-04-05 12:00 → 2009-12-22 12:00 (-104d) |  | 38d → 131d |

| ID | Task | Start | Finish | Duration | Total float | Predecessors |
| --- | --- | --- | --- | --- | --- | --- |
| 284 | Security | 2010-04-05 13:00 → 2009-12-22 13:00 (-104d) | 2010-04-05 17:00 → 2009-12-22 17:00 (-104d) |  | 38d → 131d |  |
| 285 | Insert | 2010-04-06 08:00 → 2009-12-23 08:00 (-104d) | 2010-04-06 12:00 → 2009-12-23 12:00 (-104d) |  | 38d → 131d |  |
| 286 | Update | 2010-04-06 13:00 → 2009-12-23 13:00 (-104d) | 2010-04-06 17:00 → 2009-12-23 17:00 (-104d) |  | 38d → 131d |  |
| 287 | Delete | 2010-04-07 08:00 → 2009-12-24 08:00 (-104d) | 2010-04-07 12:00 → 2009-12-24 12:00 (-104d) |  | 38d → 131d |  |
| 288 | Reports | 2010-04-07 13:00 → 2009-12-24 13:00 (-104d) | 2010-04-07 17:00 → 2009-12-24 17:00 (-104d) |  | 38d → 131d |  |
| 289 | Validation and Checking | 2010-04-08 08:00 → 2009-12-25 08:00 (-104d) | 2010-04-08 12:00 → 2009-12-25 12:00 (-104d) |  | 38d → 131d |  |
| 290 | **Warehouse Manager Test** | 2010-04-08 13:00 → 2009-12-25 13:00 (-104d) | 2010-04-13 12:00 → 2009-12-30 12:00 (-104d) |  | 38d → 131d |  |
| 291 | General Functions IN (I_) | 2010-04-08 13:00 → 2009-12-25 13:00 (-104d) | 2010-04-08 17:00 → 2009-12-25 17:00 (-104d) |  | 38d → 131d |  |
| 292 | General Functions OUT (O_) | 2010-04-09 08:00 → 2009-12-28 08:00 (-102d) | 2010-04-09 12:00 → 2009-12-28 12:00 (-102d) |  | 38d → 131d |  |
| 293 | General Functions Data Management (D_) | 2010-04-09 13:00 → 2009-12-28 13:00 (-102d) | 2010-04-09 17:00 → 2009-12-28 17:00 (-102d) |  | 38d → 131d |  |
| 294 | CFD Functions (C_) | 2010-04-12 08:00 → 2009-12-29 08:00 (-104d) | 2010-04-12 12:00 → 2009-12-29 12:00 (-104d) |  | 38d → 131d |  |
| 295 | Plog Function (F_) | 2010-04-12 13:00 → 2009-12-29 13:00 (-104d) | 2010-04-12 17:00 → 2009-12-29 17:00 (-104d) |  | 38d → 131d |  |
| 296 | TBD | 2010-04-13 08:00 → 2009-12-30 08:00 (-104d) | 2010-04-13 12:00 → 2009-12-30 12:00 (-104d) |  | 38d → 131d |  |
| 297 | Composer Test | 2010-04-13 13:00 → 2009-12-30 13:00 (-104d) | 2010-04-13 17:00 → 2009-12-30 17:00 (-104d) |  | 38d → 131d |  |
| 298 | Components Tests | 2010-04-14 08:00 → 2009-12-31 08:00 (-104d) | 2010-04-14 12:00 → 2009-12-31 12:00 (-104d) |  | 38d → 131d |  |
| 299 | Integration Tests | 2010-04-14 13:00 → 2009-12-31 13:00 (-104d) | 2010-04-14 17:00 → 2009-12-31 17:00 (-104d) |  | 38d → 131d |  |
| 300 | **Library Module Development** | 2010-04-15 08:00 → 2010-01-01 08:00 (-104d) | 2010-05-17 12:00 → 2010-01-28 17:00 (-109d) | 22.5d → 20d | 38d → 131d |  |
| 301 | **Database.pm** | 2010-04-15 08:00 → 2010-01-01 08:00 (-104d) | 2010-04-19 12:00 → 2010-01-05 12:00 (-104d) |  | 38d → 131d |  |
| 302 | Define all functions | 2010-04-15 08:00 → 2010-01-01 08:00 (-104d) | 2010-04-15 12:00 → 2010-01-01 12:00 (-104d) |  | 38d → 131d |  |
| 303 | Build test to test each function | 2010-04-15 13:00 → 2010-01-01 13:00 (-104d) | 2010-04-15 17:00 → 2010-01-01 17:00 (-104d) |  | 38d → 131d |  |
| 304 | Create each function | 2010-04-16 08:00 → 2010-01-04 08:00 (-102d) | 2010-04-16 12:00 → 2010-01-04 12:00 (-102d) |  | 38d → 131d |  |
| 305 | Determine the use of functions in other libraries | 2010-04-16 13:00 → 2010-01-04 13:00 (-102d) | 2010-04-16 17:00 → 2010-01-04 17:00 (-102d) |  | 38d → 131d |  |
| 306 | Document each function for IN/OUT function | 2010-04-19 08:00 → 2010-01-05 08:00 (-104d) | 2010-04-19 12:00 → 2010-01-05 12:00 (-104d) |  | 38d → 131d |  |
| 307 | **Storage.pm** | 2010-04-19 13:00 → 2010-01-05 13:00 (-104d) | 2010-04-21 17:00 → 2010-01-07 17:00 (-104d) |  | 38d → 131d |  |
| 308 | Define all functions | 2010-04-19 13:00 → 2010-01-05 13:00 (-104d) | 2010-04-19 17:00 → 2010-01-05 17:00 (-104d) |  | 38d → 131d |  |
| 309 | Build test to test each function | 2010-04-20 08:00 → 2010-01-06 08:00 (-104d) | 2010-04-20 12:00 → 2010-01-06 12:00 (-104d) |  | 38d → 131d |  |
| 310 | Create each function | 2010-04-20 13:00 → 2010-01-06 13:00 (-104d) | 2010-04-20 17:00 → 2010-01-06 17:00 (-104d) |  | 38d → 131d |  |
| 311 | Determine the use of functions in other libraries | 2010-04-21 08:00 → 2010-01-07 08:00 (-104d) | 2010-04-21 12:00 → 2010-01-07 12:00 (-104d) |  | 38d → 131d |  |
| 312 | Document each function for IN/OUT function | 2010-04-21 13:00 → 2010-01-07 13:00 (-104d) | 2010-04-21 17:00 → 2010-01-07 17:00 (-104d) |  | 38d → 131d |  |
| 313 | **Dataset.pm** | 2010-04-22 08:00 → 2010-01-08 08:00 (-104d) | 2010-04-26 12:00 → 2010-01-12 12:00 (-104d) |  | 38d → 131d |  |
| 314 | Define all functions | 2010-04-22 08:00 → 2010-01-08 08:00 (-104d) | 2010-04-22 12:00 → 2010-01-08 12:00 (-104d) |  | 38d → 131d |  |
| 315 | Build test to test each function | 2010-04-22 13:00 → 2010-01-08 13:00 (-104d) | 2010-04-22 17:00 → 2010-01-08 17:00 (-104d) |  | 38d → 131d |  |
| 316 | Create each function | 2010-04-23 08:00 → 2010-01-11 08:00 (-102d) | 2010-04-23 12:00 → 2010-01-11 12:00 (-102d) |  | 38d → 131d |  |
| 317 | Determine the use of functions in other libraries | 2010-04-23 13:00 → 2010-01-11 13:00 (-102d) | 2010-04-23 17:00 → 2010-01-11 17:00 (-102d) |  | 38d → 131d |  |
| 318 | Document each function for IN/OUT function | 2010-04-26 08:00 → 2010-01-12 08:00 (-104d) | 2010-04-26 12:00 → 2010-01-12 12:00 (-104d) |  | 38d → 131d |  |
| 319 | **Plog.pm** | 2010-04-26 13:00 → 2010-01-12 13:00 (-104d) | 2010-04-28 17:00 → 2010-01-14 17:00 (-104d) |  | 38d → 131d |  |
| 320 | Define all functions | 2010-04-26 13:00 → 2010-01-12 13:00 (-104d) | 2010-04-26 17:00 → 2010-01-12 17:00 (-104d) |  | 38d → 131d |  |
| 321 | Build test to test each function | 2010-04-27 08:00 → 2010-01-13 08:00 (-104d) | 2010-04-27 12:00 → 2010-01-13 12:00 (-104d) |  | 38d → 131d |  |
| 322 | Create each function | 2010-04-27 13:00 → 2010-01-13 13:00 (-104d) | 2010-04-27 17:00 → 2010-01-13 17:00 (-104d) |  | 38d → 131d |  |
| 323 | Determine the use of functions in other libraries | 2010-04-28 08:00 → 2010-01-14 08:00 (-104d) | 2010-04-28 12:00 → 2010-01-14 12:00 (-104d) |  | 38d → 131d |  |
| 324 | Document each function for IN/OUT function | 2010-04-28 13:00 → 2010-01-14 13:00 (-104d) | 2010-04-28 17:00 → 2010-01-14 17:00 (-104d) |  | 38d → 131d |  |
| 325 | **CFD.pm** | 2010-04-29 08:00 → 2010-01-15 08:00 (-104d) | 2010-05-03 12:00 → 2010-01-19 12:00 (-104d) |  | 38d → 131d |  |
| 326 | Define all functions | 2010-04-29 08:00 → 2010-01-15 08:00 (-104d) | 2010-04-29 12:00 → 2010-01-15 12:00 (-104d) |  | 38d → 131d |  |
| 327 | Build test to test each function | 2010-04-29 13:00 → 2010-01-15 13:00 (-104d) | 2010-04-29 17:00 → 2010-01-15 17:00 (-104d) |  | 38d → 131d |  |
| 328 | Create each function | 2010-04-30 08:00 → 2010-01-18 08:00 (-102d) | 2010-04-30 12:00 → 2010-01-18 12:00 (-102d) |  | 38d → 131d |  |
| 329 | Determine the use of functions in other libraries | 2010-04-30 13:00 → 2010-01-18 13:00 (-102d) | 2010-04-30 17:00 → 2010-01-18 17:00 (-102d) |  | 38d → 131d |  |
| 330 | Document each function for IN/OUT function | 2010-05-03 08:00 → 2010-01-19 08:00 (-104d) | 2010-05-03 12:00 → 2010-01-19 12:00 (-104d) |  | 38d → 131d |  |
| 331 | **ComBld.pm** | 2010-05-03 13:00 → 2010-01-19 13:00 (-104d) | 2010-05-05 17:00 → 2010-01-21 17:00 (-104d) |  | 38d → 131d |  |
| 332 | Define all functions | 2010-05-03 13:00 → 2010-01-19 13:00 (-104d) | 2010-05-03 17:00 → 2010-01-19 17:00 (-104d) |  | 38d → 131d |  |
| 333 | Build test to test each function | 2010-05-04 08:00 → 2010-01-20 08:00 (-104d) | 2010-05-04 12:00 → 2010-01-20 12:00 (-104d) |  | 38d → 131d |  |
| 334 | Create each function | 2010-05-04 13:00 → 2010-01-20 13:00 (-104d) | 2010-05-04 17:00 → 2010-01-20 17:00 (-104d) |  | 38d → 131d |  |
| 335 | Determine the use of functions in other libraries | 2010-05-05 08:00 → 2010-01-21 08:00 (-104d) | 2010-05-05 12:00 → 2010-01-21 12:00 (-104d) |  | 38d → 131d |  |
| 336 | Document each function for IN/OUT function | 2010-05-05 13:00 → 2010-01-21 13:00 (-104d) | 2010-05-05 17:00 → 2010-01-21 17:00 (-104d) |  | 38d → 131d |  |
| 337 | **Composer.pm** | 2010-05-06 08:00 → 2010-01-22 08:00 (-104d) | 2010-05-10 12:00 → 2010-01-26 12:00 (-104d) |  | 38d → 131d |  |
| 338 | Define all functions | 2010-05-06 08:00 → 2010-01-22 08:00 (-104d) | 2010-05-06 12:00 → 2010-01-22 12:00 (-104d) |  | 38d → 131d |  |
| 339 | Build test to test each function | 2010-05-06 13:00 → 2010-01-22 13:00 (-104d) | 2010-05-06 17:00 → 2010-01-22 17:00 (-104d) |  | 38d → 131d |  |
| 340 | Create each function | 2010-05-07 08:00 → 2010-01-25 08:00 (-102d) | 2010-05-07 12:00 → 2010-01-25 12:00 (-102d) |  | 38d → 131d |  |
| 341 | Determine the use of functions in other libraries | 2010-05-07 13:00 → 2010-01-25 13:00 (-102d) | 2010-05-07 17:00 → 2010-01-25 17:00 (-102d) |  | 38d → 131d |  |
| 342 | Document each function for IN/OUT function | 2010-05-10 08:00 → 2010-01-26 08:00 (-104d) | 2010-05-10 12:00 → 2010-01-26 12:00 (-104d) |  | 38d → 131d |  |
| 343 | **Mail.pm** | 2010-05-13 08:00 → 2010-01-26 13:00 (-107d) | 2010-05-17 12:00 → 2010-01-28 17:00 (-109d) |  | 38d → 131d |  |
| 344 | Define all functions | 2010-05-13 08:00 → 2010-01-26 13:00 (-107d) | 2010-05-13 12:00 → 2010-01-26 17:00 (-107d) |  | 38d → 131d | Document each function for IN/OUT function → 342 |
| 345 | Build test to test each function | 2010-05-13 13:00 → 2010-01-27 08:00 (-106d) | 2010-05-13 17:00 → 2010-01-27 12:00 (-106d) |  | 38d → 131d |  |
| 346 | Create each function | 2010-05-14 08:00 → 2010-01-27 13:00 (-107d) | 2010-05-14 12:00 → 2010-01-27 17:00 (-107d) |  | 38d → 131d |  |
| 347 | Determine the use of functions in other libraries | 2010-05-14 13:00 → 2010-01-28 08:00 (-106d) | 2010-05-14 17:00 → 2010-01-28 12:00 (-106d) |  | 38d → 131d |  |
| 348 | Document each function for IN/OUT function | 2010-05-17 08:00 → 2010-01-28 13:00 (-109d) | 2010-05-17 12:00 → 2010-01-28 17:00 (-109d) |  | 38d → 131d |  |
| 349 | **Template Development** | 2010-05-17 13:00 → 2010-01-29 08:00 (-108d) | 2010-06-29 17:00 → 2010-02-23 17:00 (-126d) | 31.5d → 18d | 38d → 131d |  |
| 350 | **Forklift (FL)** | 2010-05-17 13:00 → 2010-01-29 08:00 (-108d) | 2010-05-21 17:00 → 2010-02-04 12:00 (-106d) |  | 38d → 131d |  |
| 351 | Header Section | 2010-05-17 13:00 → 2010-01-29 08:00 (-108d) | 2010-05-17 17:00 → 2010-01-29 12:00 (-108d) |  | 38d → 131d |  |
| 352 | Variables | 2010-05-18 08:00 → 2010-01-29 13:00 (-109d) | 2010-05-18 12:00 → 2010-01-29 17:00 (-109d) |  | 38d → 131d |  |
| 353 | Top Timer Loop | 2010-05-18 13:00 → 2010-02-01 08:00 (-106d) | 2010-05-18 17:00 → 2010-02-01 12:00 (-106d) |  | 38d → 131d |  |

| ID | Task | Start | Finish | Duration | Total float | Predecessors |
| --- | --- | --- | --- | --- | --- | --- |
| 354 | File check | 2010-05-19 08:00 → 2010-02-01 13:00 (-107d) | 2010-05-19 12:00 → 2010-02-01 17:00 (-107d) |  | 38d → 131d |  |
| 355 | Top Process Section | 2010-05-19 13:00 → 2010-02-02 08:00 (-106d) | 2010-05-19 17:00 → 2010-02-02 12:00 (-106d) |  | 38d → 131d |  |
| 356 | Processes | 2010-05-20 08:00 → 2010-02-02 13:00 (-107d) | 2010-05-20 12:00 → 2010-02-02 17:00 (-107d) |  | 38d → 131d |  |
| 357 | Bottom Process Section | 2010-05-20 13:00 → 2010-02-03 08:00 (-106d) | 2010-05-20 17:00 → 2010-02-03 12:00 (-106d) |  | 38d → 131d |  |
| 358 | Bottom Timer Loop | 2010-05-21 08:00 → 2010-02-03 13:00 (-107d) | 2010-05-21 12:00 → 2010-02-03 17:00 (-107d) |  | 38d → 131d |  |
| 359 | Close Section | 2010-05-21 13:00 → 2010-02-04 08:00 (-106d) | 2010-05-21 17:00 → 2010-02-04 12:00 (-106d) |  | 38d → 131d |  |
| 360 | **Sorter (SO)** | 2010-05-24 08:00 → 2010-02-04 13:00 (-109d) | 2010-05-28 12:00 → 2010-02-10 17:00 (-107d) |  | 38d → 131d |  |
| 361 | Header Section | 2010-05-24 08:00 → 2010-02-04 13:00 (-109d) | 2010-05-24 12:00 → 2010-02-04 17:00 (-109d) |  | 38d → 131d |  |
| 362 | Variables | 2010-05-24 13:00 → 2010-02-05 08:00 (-108d) | 2010-05-24 17:00 → 2010-02-05 12:00 (-108d) |  | 38d → 131d |  |
| 363 | Top Timer Loop | 2010-05-25 08:00 → 2010-02-05 13:00 (-109d) | 2010-05-25 12:00 → 2010-02-05 17:00 (-109d) |  | 38d → 131d |  |
| 364 | File check | 2010-05-25 13:00 → 2010-02-08 08:00 (-106d) | 2010-05-25 17:00 → 2010-02-08 12:00 (-106d) |  | 38d → 131d |  |
| 365 | Top Process Section | 2010-05-26 08:00 → 2010-02-08 13:00 (-107d) | 2010-05-26 12:00 → 2010-02-08 17:00 (-107d) |  | 38d → 131d |  |
| 366 | Processes | 2010-05-26 13:00 → 2010-02-09 08:00 (-106d) | 2010-05-26 17:00 → 2010-02-09 12:00 (-106d) |  | 38d → 131d |  |
| 367 | Bottom Process Section | 2010-05-27 08:00 → 2010-02-09 13:00 (-107d) | 2010-05-27 12:00 → 2010-02-09 17:00 (-107d) |  | 38d → 131d |  |
| 368 | Bottom Timer Loop | 2010-05-27 13:00 → 2010-02-10 08:00 (-106d) | 2010-05-27 17:00 → 2010-02-10 12:00 (-106d) |  | 38d → 131d |  |
| 369 | Close Section | 2010-05-28 08:00 → 2010-02-10 13:00 (-107d) | 2010-05-28 12:00 → 2010-02-10 17:00 (-107d) |  | 38d → 131d |  |
| 370 | **Cataloger (CT)** | 2010-05-28 13:00 → 2010-02-11 08:00 (-106d) | 2010-06-03 17:00 → 2010-02-17 12:00 (-106d) |  | 38d → 131d |  |
| 371 | Header Section | 2010-05-28 13:00 → 2010-02-11 08:00 (-106d) | 2010-05-28 17:00 → 2010-02-11 12:00 (-106d) |  | 38d → 131d |  |
| 372 | Variables | 2010-05-31 08:00 → 2010-02-11 13:00 (-109d) | 2010-05-31 12:00 → 2010-02-11 17:00 (-109d) |  | 38d → 131d |  |
| 373 | Top Timer Loop | 2010-05-31 13:00 → 2010-02-12 08:00 (-108d) | 2010-05-31 17:00 → 2010-02-12 12:00 (-108d) |  | 38d → 131d |  |
| 374 | File check | 2010-06-01 08:00 → 2010-02-12 13:00 (-109d) | 2010-06-01 12:00 → 2010-02-12 17:00 (-109d) |  | 38d → 131d |  |
| 375 | Top Process Section | 2010-06-01 13:00 → 2010-02-15 08:00 (-106d) | 2010-06-01 17:00 → 2010-02-15 12:00 (-106d) |  | 38d → 131d |  |
| 376 | Processes | 2010-06-02 08:00 → 2010-02-15 13:00 (-107d) | 2010-06-02 12:00 → 2010-02-15 17:00 (-107d) |  | 38d → 131d |  |
| 377 | Bottom Process Section | 2010-06-02 13:00 → 2010-02-16 08:00 (-106d) | 2010-06-02 17:00 → 2010-02-16 12:00 (-106d) |  | 38d → 131d |  |
| 378 | Bottom Timer Loop | 2010-06-03 08:00 → 2010-02-16 13:00 (-107d) | 2010-06-03 12:00 → 2010-02-16 17:00 (-107d) |  | 38d → 131d |  |
| 379 | Close Section | 2010-06-03 13:00 → 2010-02-17 08:00 (-106d) | 2010-06-03 17:00 → 2010-02-17 12:00 (-106d) |  | 38d → 131d |  |
| 380 | **Stocker (ST)** | 2010-06-04 08:00 → 2010-02-17 13:00 (-107d) | 2010-06-10 12:00 → 2010-02-23 17:00 (-107d) |  | 38d → 131d |  |
| 381 | Header Section | 2010-06-04 08:00 → 2010-02-17 13:00 (-107d) | 2010-06-04 12:00 → 2010-02-17 17:00 (-107d) |  | 38d → 131d |  |
| 382 | Variables | 2010-06-04 13:00 → 2010-02-18 08:00 (-106d) | 2010-06-04 17:00 → 2010-02-18 12:00 (-106d) |  | 38d → 131d |  |
| 383 | Top Timer Loop | 2010-06-07 08:00 → 2010-02-18 13:00 (-109d) | 2010-06-07 12:00 → 2010-02-18 17:00 (-109d) |  | 38d → 131d |  |
| 384 | File check | 2010-06-07 13:00 → 2010-02-19 08:00 (-108d) | 2010-06-07 17:00 → 2010-02-19 12:00 (-108d) |  | 38d → 131d |  |
| 385 | Top Process Section | 2010-06-08 08:00 → 2010-02-19 13:00 (-109d) | 2010-06-08 12:00 → 2010-02-19 17:00 (-109d) |  | 38d → 131d |  |
| 386 | Processes | 2010-06-08 13:00 → 2010-02-22 08:00 (-106d) | 2010-06-08 17:00 → 2010-02-22 12:00 (-106d) |  | 38d → 131d |  |
| 387 | Bottom Process Section | 2010-06-09 08:00 → 2010-02-22 13:00 (-107d) | 2010-06-09 12:00 → 2010-02-22 17:00 (-107d) |  | 38d → 131d |  |
| 388 | Bottom Timer Loop | 2010-06-09 13:00 → 2010-02-23 08:00 (-106d) | 2010-06-09 17:00 → 2010-02-23 12:00 (-106d) |  | 38d → 131d |  |
| 389 | Close Section | 2010-06-10 08:00 → 2010-02-23 13:00 (-107d) | 2010-06-10 12:00 → 2010-02-23 17:00 (-107d) |  | 38d → 131d |  |
| 390 | **Composer Builder** | 2010-06-30 08:00 → 2010-02-24 08:00 (-126d) | 2010-07-13 12:00 → 2010-03-09 12:00 (-126d) |  | 38d → 131d |  |
| 391 | **Composer Template** | 2010-06-30 08:00 → 2010-02-24 08:00 (-126d) | 2010-07-05 17:00 → 2010-03-01 17:00 (-126d) |  | 38d → 131d |  |
| 392 | Header Section | 2010-06-30 08:00 → 2010-02-24 08:00 (-126d) | 2010-06-30 12:00 → 2010-02-24 12:00 (-126d) |  | 38d → 131d | Close Section → 389 |
| 393 | Variables | 2010-06-30 13:00 → 2010-02-24 13:00 (-126d) | 2010-06-30 17:00 → 2010-02-24 17:00 (-126d) |  | 38d → 131d |  |
| 394 | Template Loader | 2010-07-01 08:00 → 2010-02-25 08:00 (-126d) | 2010-07-01 12:00 → 2010-02-25 12:00 (-126d) |  | 38d → 131d |  |
| 395 | Control Table Load | 2010-07-01 13:00 → 2010-02-25 13:00 (-126d) | 2010-07-01 17:00 → 2010-02-25 17:00 (-126d) |  | 38d → 131d |  |
| 396 | Top Process Build Loop | 2010-07-02 08:00 → 2010-02-26 08:00 (-126d) | 2010-07-02 12:00 → 2010-02-26 12:00 (-126d) |  | 38d → 131d |  |
| 397 | Build construction paragraphs | 2010-07-02 13:00 → 2010-02-26 13:00 (-126d) | 2010-07-02 17:00 → 2010-02-26 17:00 (-126d) |  | 38d → 131d |  |
| 398 | Bottom Process Section | 2010-07-05 08:00 → 2010-03-01 08:00 (-126d) | 2010-07-05 12:00 → 2010-03-01 12:00 (-126d) |  | 38d → 131d |  |
| 399 | Close Section | 2010-07-05 13:00 → 2010-03-01 13:00 (-126d) | 2010-07-05 17:00 → 2010-03-01 17:00 (-126d) |  | 38d → 131d |  |
| 400 | **Composer Builder** | 2010-07-06 08:00 → 2010-03-02 08:00 (-126d) | 2010-07-08 17:00 → 2010-03-04 17:00 (-126d) |  | 38d → 131d |  |
| 401 | Composer Builder Detailed Design and Philosophy | 2010-07-06 08:00 → 2010-03-02 08:00 (-126d) | 2010-07-06 12:00 → 2010-03-02 12:00 (-126d) |  | 38d → 131d |  |
| 402 | Composer Builder Structure | 2010-07-06 13:00 → 2010-03-02 13:00 (-126d) | 2010-07-06 17:00 → 2010-03-02 17:00 (-126d) |  | 38d → 131d |  |
| 403 | Composer Builder Library | 2010-07-07 08:00 → 2010-03-03 08:00 (-126d) | 2010-07-07 12:00 → 2010-03-03 12:00 (-126d) |  | 38d → 131d |  |
| 404 | Composer Builder Metadata | 2010-07-07 13:00 → 2010-03-03 13:00 (-126d) | 2010-07-07 17:00 → 2010-03-03 17:00 (-126d) |  | 38d → 131d |  |
| 405 | Composer Builder Compiler Script | 2010-07-08 08:00 → 2010-03-04 08:00 (-126d) | 2010-07-08 12:00 → 2010-03-04 12:00 (-126d) |  | 38d → 131d |  |
| 406 | Composer Builder exception and valiation Section | 2010-07-08 13:00 → 2010-03-04 13:00 (-126d) | 2010-07-08 17:00 → 2010-03-04 17:00 (-126d) |  | 38d → 131d |  |
| 407 | **Composer** | 2010-07-09 08:00 → 2010-03-05 08:00 (-126d) | 2010-07-12 17:00 → 2010-03-08 17:00 (-126d) |  | 38d → 131d |  |
| 408 | Composer Template Development | 2010-07-09 08:00 → 2010-03-05 08:00 (-126d) | 2010-07-09 12:00 → 2010-03-05 12:00 (-126d) |  | 38d → 131d |  |
| 409 | Composer Library Development | 2010-07-09 13:00 → 2010-03-05 13:00 (-126d) | 2010-07-09 17:00 → 2010-03-05 17:00 (-126d) |  | 38d → 131d |  |
| 410 | Composer Metadata Development | 2010-07-12 08:00 → 2010-03-08 08:00 (-126d) | 2010-07-12 12:00 → 2010-03-08 12:00 (-126d) |  | 38d → 131d |  |
| 411 | Composer Compiler Script Development | 2010-07-12 13:00 → 2010-03-08 13:00 (-126d) | 2010-07-12 17:00 → 2010-03-08 17:00 (-126d) |  | 38d → 131d |  |
| 412 | Composer Control | 2010-07-13 08:00 → 2010-03-09 08:00 (-126d) | 2010-07-13 12:00 → 2010-03-09 12:00 (-126d) |  | 38d → 131d |  |
| 413 | **Phase One Integration** | 2010-07-13 13:00 → 2010-03-09 13:00 (-126d) | 2010-07-28 17:00 → 2010-03-23 12:00 (-127d) | 11.5d → 10d | 38d → 131d |  |
| 414 | Control Table Data Definition | 2010-07-13 13:00 → 2010-03-09 13:00 (-126d) | 2010-07-13 17:00 → 2010-03-09 17:00 (-126d) |  | 38d → 131d |  |
| 415 | **Library Control Table Interface** | 2010-07-14 08:00 → 2010-03-10 08:00 (-126d) | 2010-07-23 17:00 → 2010-03-18 12:00 (-127d) | 8d → 6.5d | 38d → 131d |  |
| 416 | Common Library Paragraphs | 2010-07-14 08:00 → 2010-03-10 08:00 (-126d) | 2010-07-14 12:00 → 2010-03-10 12:00 (-126d) |  | 38d → 131d |  |
| 417 | Common Variable Paragraphs | 2010-07-14 13:00 → 2010-03-10 13:00 (-126d) | 2010-07-14 17:00 → 2010-03-10 17:00 (-126d) |  | 38d → 131d |  |
| 418 | Common Timer Paragraphs | 2010-07-15 08:00 → 2010-03-11 08:00 (-126d) | 2010-07-15 12:00 → 2010-03-11 12:00 (-126d) |  | 38d → 131d |  |
| 419 | Common Header Paragraphs | 2010-07-15 13:00 → 2010-03-11 13:00 (-126d) | 2010-07-15 17:00 → 2010-03-11 17:00 (-126d) |  | 38d → 131d |  |
| 420 | Forklift (FL) Process Paragraphs | 2010-07-16 08:00 → 2010-03-12 08:00 (-126d) | 2010-07-16 12:00 → 2010-03-12 12:00 (-126d) |  | 38d → 131d |  |
| 421 | Sorter (SO)Process Paragraphs | 2010-07-16 13:00 → 2010-03-12 13:00 (-126d) | 2010-07-16 17:00 → 2010-03-12 17:00 (-126d) |  | 38d → 131d |  |
| 422 | Cataloger (CT)Process Paragraphs | 2010-07-19 08:00 → 2010-03-15 08:00 (-126d) | 2010-07-19 12:00 → 2010-03-15 12:00 (-126d) |  | 38d → 131d |  |
| 423 | Stocker (ST)Process Paragraphs | 2010-07-19 13:00 → 2010-03-15 13:00 (-126d) | 2010-07-19 17:00 → 2010-03-15 17:00 (-126d) |  | 38d → 131d |  |

| ID | Task | Start | Finish | Duration | Total float | Predecessors |
| --- | --- | --- | --- | --- | --- | --- |
| 424 | Composer Builder Paragraphs | 2010-07-21 13:00 → 2010-03-16 08:00 (-127d) | 2010-07-21 17:00 → 2010-03-16 12:00 (-127d) |  | 38d → 131d | Sender (SD)Process Paragraphs → 423 |
| 425 | Composer Paragraphs | 2010-07-22 08:00 → 2010-03-16 13:00 (-128d) | 2010-07-22 12:00 → 2010-03-16 17:00 (-128d) |  | 38d → 131d |  |
| 426 | CFD Paragraphs | 2010-07-22 13:00 → 2010-03-17 08:00 (-127d) | 2010-07-22 17:00 → 2010-03-17 12:00 (-127d) |  | 38d → 131d |  |
| 427 | PowerLOG Paragraphs | 2010-07-23 08:00 → 2010-03-17 13:00 (-128d) | 2010-07-23 12:00 → 2010-03-17 17:00 (-128d) |  | 38d → 131d |  |
| 428 | Other Metadata | 2010-07-23 13:00 → 2010-03-18 08:00 (-127d) | 2010-07-23 17:00 → 2010-03-18 12:00 (-127d) |  | 38d → 131d |  |
| 429 | **Warehouse Manager** | 2010-07-26 08:00 → 2010-03-18 13:00 (-130d) | 2010-07-28 17:00 → 2010-03-23 12:00 (-127d) |  | 38d → 131d |  |
| 430 | General Functions IN (I_) | 2010-07-26 08:00 → 2010-03-18 13:00 (-130d) | 2010-07-26 12:00 → 2010-03-18 17:00 (-130d) |  | 38d → 131d |  |
| 431 | General Functions OUT (O_) | 2010-07-26 13:00 → 2010-03-19 08:00 (-129d) | 2010-07-26 17:00 → 2010-03-19 12:00 (-129d) |  | 38d → 131d |  |
| 432 | General Functions Data Management (D_) | 2010-07-27 08:00 → 2010-03-19 13:00 (-130d) | 2010-07-27 12:00 → 2010-03-19 17:00 (-130d) |  | 38d → 131d |  |
| 433 | CFD Functions (C_) | 2010-07-27 13:00 → 2010-03-22 08:00 (-127d) | 2010-07-27 17:00 → 2010-03-22 12:00 (-127d) |  | 38d → 131d |  |
| 434 | Plog Function (F_) | 2010-07-28 08:00 → 2010-03-22 13:00 (-128d) | 2010-07-28 12:00 → 2010-03-22 17:00 (-128d) |  | 38d → 131d |  |
| 435 | TBD Functions | 2010-07-28 13:00 → 2010-03-23 08:00 (-127d) | 2010-07-28 17:00 → 2010-03-23 12:00 (-127d) |  | 38d → 131d |  |
| 436 | **Phase Two Integration** | 2010-07-29 08:00 → 2010-03-23 13:00 (-128d) | 2010-07-29 17:00 → 2010-03-24 12:00 (-127d) |  | 38d → 131d |  |
| 437 | Composer Builder | 2010-07-29 08:00 → 2010-03-23 13:00 (-128d) | 2010-07-29 12:00 → 2010-03-23 17:00 (-128d) |  | 38d → 131d |  |
| 438 | Composer Builder Library Interface | 2010-07-29 13:00 → 2010-03-24 08:00 (-127d) | 2010-07-29 17:00 → 2010-03-24 12:00 (-127d) |  | 38d → 131d |  |
| 439 | **Phase Three Process Building** | 2010-07-30 08:00 → 2010-03-24 13:00 (-128d) | 2010-07-30 17:00 → 2010-03-25 12:00 (-127d) |  | 38d → 131d |  |
| 440 | Metadata defintion for Each Template Defintion | 2010-07-30 08:00 → 2010-03-24 13:00 (-128d) | 2010-07-30 12:00 → 2010-03-24 17:00 (-128d) |  | 38d → 131d |  |
| 441 | Composer Metadata merge | 2010-07-30 13:00 → 2010-03-25 08:00 (-127d) | 2010-07-30 17:00 → 2010-03-25 12:00 (-127d) |  | 38d → 131d |  |
| 442 | **Phase Four Component Integration** | 2010-08-02 08:00 → 2010-03-25 13:00 (-130d) | 2010-08-05 12:00 → 2010-03-29 12:00 (-129d) | 3.5d → 2d | 38d → 131d |  |
| 443 | Forklift | 2010-08-02 08:00 → 2010-03-25 13:00 (-130d) | 2010-08-02 12:00 → 2010-03-25 17:00 (-130d) |  | 38d → 131d |  |
| 444 | Sorter | 2010-08-02 13:00 → 2010-03-26 08:00 (-129d) | 2010-08-02 17:00 → 2010-03-26 12:00 (-129d) |  | 38d → 131d |  |
| 445 | Cataloger | 2010-08-03 08:00 → 2010-03-26 13:00 (-130d) | 2010-08-03 12:00 → 2010-03-26 17:00 (-130d) |  | 38d → 131d |  |
| 446 | Stocker | 2010-08-03 13:00 → 2010-03-29 08:00 (-127d) | 2010-08-03 17:00 → 2010-03-29 12:00 (-127d) |  | 38d → 131d |  |
| 447 | **Deployment Plan** | 2010-08-05 13:00 → 2010-03-29 13:00 (-129d) | 2010-08-06 17:00 → 2010-03-30 17:00 (-129d) |  | 38d → 131d |  |
| 448 | Database Table and Metadata Deployment | 2010-08-05 13:00 → 2010-03-29 13:00 (-129d) | 2010-08-05 17:00 → 2010-03-29 17:00 (-129d) |  | 38d → 131d | Sender → 446 |
| 449 | Application Deployment | 2010-08-06 08:00 → 2010-03-30 08:00 (-129d) | 2010-08-06 12:00 → 2010-03-30 12:00 (-129d) |  | 38d → 131d |  |
| 450 | In Place Deployment Test Suite | 2010-08-06 13:00 → 2010-03-30 13:00 (-129d) | 2010-08-06 17:00 → 2010-03-30 17:00 (-129d) |  | 38d → 131d |  |
| 451 | **Development Testing Cycle** | 2010-08-09 08:00 → 2010-03-31 08:00 (-131d) | 2010-08-12 12:00 → 2010-04-05 12:00 (-129d) |  | 38d → 131d |  |
| 452 | **Phase One** | 2010-08-09 08:00 → 2010-03-31 08:00 (-131d) | 2010-08-10 17:00 → 2010-04-01 17:00 (-131d) |  | 38d → 131d |  |
| 453 | Library Module Tests | 2010-08-09 08:00 → 2010-03-31 08:00 (-131d) | 2010-08-09 12:00 → 2010-03-31 12:00 (-131d) |  | 38d → 131d |  |
| 454 | Control Table Tests | 2010-08-09 13:00 → 2010-03-31 13:00 (-131d) | 2010-08-09 17:00 → 2010-03-31 17:00 (-131d) |  | 38d → 131d |  |
| 455 | Business Rule Manager Test | 2010-08-10 08:00 → 2010-04-01 08:00 (-131d) | 2010-08-10 12:00 → 2010-04-01 12:00 (-131d) |  | 38d → 131d |  |
| 456 | Warehouse Manager Test | 2010-08-10 13:00 → 2010-04-01 13:00 (-131d) | 2010-08-10 17:00 → 2010-04-01 17:00 (-131d) |  | 38d → 131d |  |
| 457 | **Phase Two** | 2010-08-11 08:00 → 2010-04-02 08:00 (-131d) | 2010-08-11 12:00 → 2010-04-02 12:00 (-131d) |  | 38d → 131d |  |
| 458 | Composer Test | 2010-08-11 08:00 → 2010-04-02 08:00 (-131d) | 2010-08-11 12:00 → 2010-04-02 12:00 (-131d) |  | 38d → 131d |  |
| 459 | **Phase Three** | 2010-08-11 13:00 → 2010-04-02 13:00 (-131d) | 2010-08-11 17:00 → 2010-04-02 17:00 (-131d) |  | 38d → 131d |  |
| 460 | Components Tests | 2010-08-11 13:00 → 2010-04-02 13:00 (-131d) | 2010-08-11 17:00 → 2010-04-02 17:00 (-131d) |  | 38d → 131d |  |
| 461 | **Phase Four** | 2010-08-12 08:00 → 2010-04-05 08:00 (-129d) | 2010-08-12 12:00 → 2010-04-05 12:00 (-129d) |  | 38d → 131d |  |
| 462 | Integration Tests | 2010-08-12 08:00 → 2010-04-05 08:00 (-129d) | 2010-08-12 12:00 → 2010-04-05 12:00 (-129d) |  | 38d → 131d |  |
| 463 | **Functional Testing Cycle** | 2010-08-12 13:00 → 2010-04-05 13:00 (-129d) | 2010-08-17 17:00 → 2010-04-08 17:00 (-131d) |  | 38d → 131d |  |
| 464 | **Phase One** | 2010-08-12 13:00 → 2010-04-05 13:00 (-129d) | 2010-08-16 12:00 → 2010-04-07 12:00 (-131d) |  | 38d → 131d |  |
| 465 | Library Module Tests | 2010-08-12 13:00 → 2010-04-05 13:00 (-129d) | 2010-08-12 17:00 → 2010-04-05 17:00 (-129d) |  | 38d → 131d |  |
| 466 | Control Table Tests | 2010-08-13 08:00 → 2010-04-06 08:00 (-129d) | 2010-08-13 12:00 → 2010-04-06 12:00 (-129d) |  | 38d → 131d |  |
| 467 | Business Rule Manager Test | 2010-08-13 13:00 → 2010-04-06 13:00 (-129d) | 2010-08-13 17:00 → 2010-04-06 17:00 (-129d) |  | 38d → 131d |  |
| 468 | Warehouse Manager Test | 2010-08-16 08:00 → 2010-04-07 08:00 (-131d) | 2010-08-16 12:00 → 2010-04-07 12:00 (-131d) |  | 38d → 131d |  |
| 469 | **Phase Two** | 2010-08-16 13:00 → 2010-04-07 13:00 (-131d) | 2010-08-16 17:00 → 2010-04-07 17:00 (-131d) |  | 38d → 131d |  |
| 470 | Composer Test | 2010-08-16 13:00 → 2010-04-07 13:00 (-131d) | 2010-08-16 17:00 → 2010-04-07 17:00 (-131d) |  | 38d → 131d |  |
| 471 | **Phase Three** | 2010-08-17 08:00 → 2010-04-08 08:00 (-131d) | 2010-08-17 12:00 → 2010-04-08 12:00 (-131d) |  | 38d → 131d |  |
| 472 | Components Tests | 2010-08-17 08:00 → 2010-04-08 08:00 (-131d) | 2010-08-17 12:00 → 2010-04-08 12:00 (-131d) |  | 38d → 131d |  |
| 473 | **Phase Four** | 2010-08-17 13:00 → 2010-04-08 13:00 (-131d) | 2010-08-17 17:00 → 2010-04-08 17:00 (-131d) |  | 38d → 131d |  |
| 474 | Integration Tests | 2010-08-17 13:00 → 2010-04-08 13:00 (-131d) | 2010-08-17 17:00 → 2010-04-08 17:00 (-131d) |  | 38d → 131d |  |
| 475 | **Move from Test Environment** | 2010-08-18 08:00 → 2010-04-09 08:00 (-131d) | 2010-08-19 12:00 → 2010-04-12 12:00 (-129d) |  | 38d → 131d |  |
| 476 | Package for Deployment | 2010-08-18 08:00 → 2010-04-09 08:00 (-131d) | 2010-08-18 12:00 → 2010-04-09 12:00 (-131d) |  | 38d → 131d |  |
| 477 | Submit for Move | 2010-08-18 13:00 → 2010-04-09 13:00 (-131d) | 2010-08-18 17:00 → 2010-04-09 17:00 (-131d) |  | 38d → 131d |  |
| 478 | Run Development Test Suite | 2010-08-19 08:00 → 2010-04-12 08:00 (-129d) | 2010-08-19 12:00 → 2010-04-12 12:00 (-129d) |  | 38d → 131d |  |
| 479 | **Process Signoff** | 2010-08-19 13:00 → 2010-04-12 13:00 (-129d) | 2010-08-20 17:00 → 2010-04-13 17:00 (-129d) |  | 38d → 131d |  |
| 480 | Acceptance Signoff | 2010-08-19 13:00 → 2010-04-12 13:00 (-129d) | 2010-08-19 17:00 → 2010-04-12 17:00 (-129d) |  | 38d → 131d |  |
| 481 | Lessons Learned | 2010-08-20 08:00 → 2010-04-13 08:00 (-129d) | 2010-08-20 12:00 → 2010-04-13 12:00 (-129d) |  | 38d → 131d |  |
| 482 | Deliver Final Documentation | 2010-08-20 13:00 → 2010-04-13 13:00 (-129d) | 2010-08-20 17:00 → 2010-04-13 17:00 (-129d) |  | 38d → 131d |  |
